# 2Tech_PlannigPrévisionnel_Version2

Schedule from MS Project, 2017-04-03 to 2017-05-29, 7 hours a day, A marks actual dates.

## Calendars

- 2Tech_CareMe: Mon 13:00-18:00; Tue 14:00-17:00; Wed off; Thu 18:00-23:00; Fri 09:00-17:00; Sat 10:00-21:00; Sun 18:00-23:00. Exceptions (off unless hours are given): 2017-04-09 to 2017-04-13 (Control), 2017-05-01 (1er May).

## Resources

| Resource |
| --- |
| TAKLIt Zina |
| IHADADENE Thinhinane |
| OUKEHENNICHE Abdelkrim |
| BALAMANE Asma |
| CHIKHAISSA Mahfoud |
| YEBDA Sadia |

## Schedule

| ID | WBS | Task | Type | Duration | Start | Finish | Predecessors | Complete | Remaining | Total slack | Free slack | Constraint | Resources | Work | Actual work |
| --- | --- | --- | --- | --- | --- | --- | --- | --- | --- | --- | --- | --- | --- | --- | --- |
| 1 | 1 | **Initialisation et cadrage** |  | 3h | 2017-04-03 A | 2017-04-03 A |  | 100% |  |  |  |  |  | 27h | 27h |
| 2 | 1.1 | Discution de projet |  | 3h | 2017-04-03 A | 2017-04-03 A |  | 100% |  |  |  |  | BALAMANE Asma; CHIKHAISSA Mahfoud; IHADADENE Thinhinane; OUKEHENNICHE Abdelkrim; TAKLIt Zina; YEBDA Sadia | 18h | 18h |
| 3 | 1.2 | Eude d'opportunité |  | 1h | 2017-04-03 A | 2017-04-03 A | 2 | 100% |  |  |  |  | BALAMANE Asma; CHIKHAISSA Mahfoud; IHADADENE Thinhinane; OUKEHENNICHE Abdelkrim; TAKLIt Zina; YEBDA Sadia | 6h | 6h |
| 4 | 1.3 | Lancement de projet |  | 30min | 2017-04-03 A | 2017-04-03 A | 3 | 100% |  |  |  |  | BALAMANE Asma; CHIKHAISSA Mahfoud; IHADADENE Thinhinane; OUKEHENNICHE Abdelkrim; TAKLIt Zina | 2.5h | 2.5h |
| 5 | 1.4 | Affectation initiale des taches |  | 30min | 2017-04-03 A | 2017-04-03 A | 4 | 100% |  |  |  |  | TAKLIt Zina | 0.5h | 0.5h |
| 6 | 2 | **Organisation et structuration de procéder de travail et de document** |  | 8d? | 2017-04-03 A | 2017-04-17 A |  | 100% |  |  |  |  |  | 251h | 251h |
| 7 | 2.1 | Définition de role et de responsabilité |  | 1h | 2017-04-03 A | 2017-04-03 A | 5 | 100% |  |  |  |  | TAKLIt Zina | 1h | 1h |
| 8 | 2.2 | Logo |  | 7d | 2017-04-03 A | 2017-04-09 A | 7 | 100% |  |  |  |  | CHIKHAISSA Mahfoud; OUKEHENNICHE Abdelkrim | 98h | 98h |
| 9 | 2.3 | Charte de codage |  | 6d | 2017-04-09 A | 2017-04-15 A | 8 | 100% |  |  |  |  | OUKEHENNICHE Abdelkrim | 42h | 42h |
| 10 | 2.4 | Workflow de validation |  | 6d | 2017-04-09 A | 2017-04-15 A | 8 | 100% |  |  |  |  | YEBDA Sadia | 42h | 42h |
| 11 | 2.5 | Charte de documents |  | 6d? | 2017-04-09 A | 2017-04-15 A | 8 | 100% |  |  |  |  | IHADADENE Thinhinane | 42h | 42h |
| 12 | 2.6 | Dépo livrables | milestone | 0d | 2017-04-16 A | 2017-04-16 A | 11, 10, 9, 8 | 100% |  |  |  | start no earlier than 2017-04-16 |  |  |  |
| 13 | 2.7 | Plan d'assurance Qualité (PAQ) |  | 4h | 2017-04-17 A | 2017-04-17 A | 12, 24 | 100% |  |  |  | start no earlier than 2017-04-17 | CHIKHAISSA Mahfoud; IHADADENE Thinhinane; OUKEHENNICHE Abdelkrim; YEBDA Sadia | 16h | 16h |
| 14 | 2.8 | Plannig Prévisionnel |  | 4h | 2017-04-17 A | 2017-04-17 A | 12, 24 | 100% |  |  |  | start no earlier than 2017-04-17 | BALAMANE Asma; TAKLIt Zina | 8h | 8h |
| 15 | 2.9 | Validation de livrable |  | 1h | 2017-04-17 A | 2017-04-17 A | 14, 13 | 100% |  |  |  |  | IHADADENE Thinhinane; TAKLIt Zina | 2h | 2h |
| 16 | 2.10 | Dépôt Livrables PAQ et Plannig prévisionnel | milestone | 0d | 2017-04-17 A | 2017-04-17 A | 13, 14, 15 | 100% |  |  |  |  | IHADADENE Thinhinane; TAKLIt Zina |  |  |
| 17 | 3 | **Réponse administrative** |  | 2.71d | 2017-04-09 A | 2017-04-16 A |  | 100% |  |  |  |  |  | 57h | 57h |
| 18 | 3.1 | **Profil de l'équipe** |  | 0.86d | 2017-04-15 A | 2017-04-16 A |  | 100% |  |  |  |  |  | 21h | 21h |
| 19 | 3.1.1 | Cvs |  | 3h | 2017-04-15 A | 2017-04-15 A | 11 | 100% |  |  |  |  | BALAMANE Asma; CHIKHAISSA Mahfoud; IHADADENE Thinhinane; OUKEHENNICHE Abdelkrim; TAKLIt Zina; YEBDA Sadia | 18h | 18h |
| 20 | 3.1.2 | Fiche de l'équipe |  | 3h | 2017-04-15 A | 2017-04-16 A | 19 | 100% |  |  |  |  | TAKLIt Zina | 3h | 3h |
| 21 | 3.2 | Brochure |  | 2d | 2017-04-14 A | 2017-04-15 A | 8 | 100% |  |  |  | start no earlier than 2017-04-14 | CHIKHAISSA Mahfoud | 14h | 14h |
| 22 | 3.3 | Registre de commerce |  | 2d | 2017-04-09 A | 2017-04-11 A | 8 | 100% |  |  |  |  | BALAMANE Asma | 14h | 14h |
| 23 | 3.4 | Validation de livrable |  | 4h | 2017-04-16 A | 2017-04-16 A | 20, 21, 22 | 100% |  |  |  |  | IHADADENE Thinhinane; TAKLIt Zina | 8h | 8h |
| 24 | 3.5 | Dépôt de Livrables | milestone | 0d | 2017-04-16 A | 2017-04-16 A | 23 | 100% |  |  |  |  | TAKLIt Zina |  |  |
| 25 | 4 | Analse des risques |  | 1d | 2017-04-17 A | 2017-04-18 | 16 | 95% | 0.05d | 30.29d | 0.43d |  | BALAMANE Asma; CHIKHAISSA Mahfoud; IHADADENE Thinhinane; OUKEHENNICHE Abdelkrim; TAKLIt Zina; YEBDA Sadia | 42h | 39.9h |

Notes:
- 6: Décalage a cause de la seaine de control
- 17: Décalge a cause de la semaine de controle .
- 25: On rajoute et on résolue des risque au fur et à mesure de l'avancement.

| ID | WBS | Task | Type | Duration | Start | Finish | Predecessors | Complete | Remaining | Total slack | Free slack | Constraint | Resources | Work | Actual work |
| --- | --- | --- | --- | --- | --- | --- | --- | --- | --- | --- | --- | --- | --- | --- | --- |
| 26 | 5 | **Réponce thechnique** |  | 13.57d | 2017-04-20 A | 2017-05-07 |  | 83% | 2.33d | 16.57d |  |  |  | 730h | 640.65h |
| 27 | 5.1 | **Spécification& Conception** |  | 11.71d | 2017-04-20 A | 2017-05-05 |  | 90% | 1.22d | 18.43d |  |  |  | 672h | 609.75h |
| 28 | 5.1.1 | Définition de l'architecture logiciel et matériel de la solution |  | 1d | 2017-04-20 A | 2017-04-21 | 25 | 85% | 0.15d | 28.29d |  | finish no earlier than 2017-04-21 | CHIKHAISSA Mahfoud; OUKEHENNICHE Abdelkrim; TAKLIt Zina; BALAMANE Asma; YEBDA Sadia; IHADADENE Thinhinane | 42h | 35.7h |
| 29 | 5.1.2 | **Spécification de besoins fonctionnelle** |  | 4.86d | 2017-04-20 A | 2017-04-25 A |  | 100% |  |  |  |  |  | 201h | 201h |
| 30 | 5.1.2.1 | Spécification fonctionnelle du ministère |  | 5h | 2017-04-20 A | 2017-04-20 A | 28 | 100% |  |  |  |  | OUKEHENNICHE Abdelkrim | 5h | 5h |
| 31 | 5.1.2.2 | Spécification fonctionnelle du Patients diabétiques |  | 3d | 2017-04-20 A | 2017-04-22 A | 28 | 100% |  |  |  |  | TAKLIt Zina | 21h | 21h |
| 32 | 5.1.2.3 | Spécification fonctionnelle du grossesses à risques |  | 3d | 2017-04-20 A | 2017-04-22 A | 28 | 100% |  |  |  |  | BALAMANE Asma | 21h | 21h |
| 33 | 5.1.2.4 | Spécification fonctionnelle des atteints d'alzheimer |  | 1d | 2017-04-20 A | 2017-04-20 A | 28 | 100% |  |  |  |  | CHIKHAISSA Mahfoud | 7h | 7h |
| 34 | 5.1.2.5 | Spécification fonctionnelle du praticien à la santé |  | 1d | 2017-04-21 A | 2017-04-21 A | 28 | 100% |  |  |  | start no earlier than 2017-04-28 | IHADADENE Thinhinane | 7h | 7h |
| 35 | 5.1.2.6 | Spécification fonctionnelle du transport |  | 2d | 2017-04-21 A | 2017-04-22 A | 28 | 100% |  |  |  | start no earlier than 2017-04-28 | YEBDA Sadia | 14h | 14h |
| 36 | 5.1.2.7 | Validation du spécification fonctionnel |  | 3d | 2017-04-23 A | 2017-04-25 A | 30, 31, 32, 33, 34, 35 | 100% |  |  |  | start no earlier than 2017-04-23 | BALAMANE Asma; CHIKHAISSA Mahfoud; IHADADENE Thinhinane; OUKEHENNICHE Abdelkrim; TAKLIt Zina; YEBDA Sadia | 126h | 126h |
| 37 | 5.1.3 | Spécification de besoin technique |  | 3h | 2017-04-25 A | 2017-04-25 | 36 | 95% | 0.15h | 23.86d | 0d | start no earlier than 2017-04-25 | IHADADENE Thinhinane; OUKEHENNICHE Abdelkrim; CHIKHAISSA Mahfoud | 9h | 8.55h |
| 38 | 5.1.4 | Découpage modulaire de la solution |  | 3h | 2017-04-25 A | 2017-04-25 A | 36 | 100% |  |  |  | start no earlier than 2017-04-25 | BALAMANE Asma; TAKLIt Zina; YEBDA Sadia | 9h | 9h |
| 39 | 5.1.5 | **Elaboration des diagrammes UML** |  | 3.43d | 2017-04-27 A | 2017-04-30 A |  | 100% |  |  |  |  | BALAMANE Asma; YEBDA Sadia; CHIKHAISSA Mahfoud; IHADADENE Thinhinane; OUKEHENNICHE Abdelkrim; TAKLIt Zina | 310h | 310h |
| 40 | 5.1.5.1 | module gestion de patient |  | 4d | 2017-04-27 A | 2017-04-29 A | 37, 38, 36 | 100% |  |  |  | start no earlier than 2017-04-27 | TAKLIt Zina | 28h | 28h |
| 41 | 5.1.5.2 | module de transport |  | 3d | 2017-04-27 A | 2017-04-29 A | 37, 38, 36 | 100% |  |  |  | start no earlier than 2017-04-27 | YEBDA Sadia | 21h | 21h |
| 42 | 5.1.5.3 | module de suivie et de traitement |  | 4d | 2017-04-27 A | 2017-04-29 A | 37, 38, 36 | 100% |  |  |  | start no earlier than 2017-04-27 | BALAMANE Asma | 28h | 28h |
| 43 | 5.1.5.4 | module de prélèvement |  | 2d | 2017-04-29 A | 2017-04-30 A | 37, 38, 36 | 100% |  |  |  | start no earlier than 2017-04-29 | IHADADENE Thinhinane | 14h | 14h |
| 44 | 5.1.5.5 | module d'alerte et de rappelle et de planning |  | 3d | 2017-04-27 A | 2017-04-29 A | 37, 38, 36 | 100% |  |  |  | start no earlier than 2017-04-27 | CHIKHAISSA Mahfoud | 21h | 21h |
| 45 | 5.1.6 | Réunion de validation du diagramme |  | 1d | 2017-05-01 A | 2017-05-01 | 39, 40, 41, 42, 43, 44 | 95% | 0.05d | 8.61d | 0d | start no earlier than 2017-05-01 | BALAMANE Asma; CHIKHAISSA Mahfoud; IHADADENE Thinhinane; OUKEHENNICHE Abdelkrim; TAKLIt Zina; YEBDA Sadia | 42h | 39.9h |
| 46 | 5.1.7 | Conception du modèle de la BDD |  | 2d | 2017-05-01 A | 2017-05-04 | 45 | 20% | 1.6d | 16.63d | 0d |  | BALAMANE Asma; YEBDA Sadia; TAKLIt Zina | 31h | 5.6h |
| 47 | 5.1.8 | Validation du modèle de BDD |  | 2d | 2017-05-04 | 2017-05-05 | 46 |  |  | 16.63d | 0d |  | IHADADENE Thinhinane; BALAMANE Asma | 28h |  |
| 48 | 5.2 | Livrable Fiche technique de la solution |  | 2d | 2017-05-05 A | 2017-05-07 | 45, 47 | 60% | 0.8d | 15.86d | 0d | start no earlier than 2017-05-04 | IHADADENE Thinhinane | 14h | 8.4h |
| 49 | 5.3 | livrable des spécification fonctionnelles |  | 2d | 2017-05-04 A | 2017-05-05 | 45, 46 | 80% | 0.4d | 17.43d | 1.57d | start no earlier than 2017-05-04 | YEBDA Sadia | 14h | 11.2h |
| 50 | 5.4 | livrable des spécification technique |  | 1d | 2017-05-05 A | 2017-05-06 | 45, 47 | 70% | 0.3d | 16.57d | 0.71d | start no earlier than 2017-05-04 | OUKEHENNICHE Abdelkrim | 7h | 4.9h |
| 51 | 5.5 | Planning prévisionnel |  | 16h | 2017-05-02 A | 2017-05-04 | 45 | 40% | 9.6h | 20.29d |  | finish no earlier than 2017-05-04 | TAKLIt Zina | 16h | 6.4h |
| 52 | 5.6 | Validation de livrables |  | 1d | 2017-05-07 | 2017-05-07 | 48, 49, 50 |  |  | 15.86d | 0d | start no earlier than 2017-05-06 | IHADADENE Thinhinane | 7h |  |
| 53 | 5.7 | Dépôt de livrables | milestone | 0d | 2017-05-07 | 2017-05-07 | 52 |  |  | 16.57d |  |  | TAKLIt Zina |  |  |

| ID | WBS | Task | Type | Duration | Start | Finish | Predecessors | Complete | Remaining | Total slack | Free slack | Constraint | Resources | Work | Actual work |
| --- | --- | --- | --- | --- | --- | --- | --- | --- | --- | --- | --- | --- | --- | --- | --- |
| 54 | 6 | **Prototype** |  | 14.71d | 2017-04-25 A | 2017-05-16 |  | 5% | 13.99d | 10.14d |  |  |  | 174h | 6.3h |
| 55 | 6.1 | Spécification de prototype |  | 1d | 2017-04-25 | 2017-04-27 | 37, 38, 36 |  |  | 23.86d |  |  | OUKEHENNICHE Abdelkrim | 7h |  |
| 56 | 6.2 | Livrable de spécification prototype |  | 1d | 2017-05-04 A | 2017-05-04 | 45 | 90% | 0.1d | 8.29d | 1.86d | start no earlier than 2017-05-04 | OUKEHENNICHE Abdelkrim | 7h | 6.3h |
| 57 | 6.3 | Validation de Livrable de spécification prototype |  | 2h | 2017-05-06 | 2017-05-06 | 56 |  |  | 6.43d | 0d | start no earlier than 2017-05-06 | TAKLIt Zina | 2h |  |
| 58 | 6.4 | Dépôt de livrable de spécification prototype | milestone | 0d | 2017-05-06 | 2017-05-06 | 57 |  |  | 6.71d | 0d |  | TAKLIt Zina |  |  |
| 59 | 6.5 | Developpement de prototype |  | 2d | 2017-05-06 | 2017-05-07 | 58, 45 |  |  | 6.29d | 0d |  | CHIKHAISSA Mahfoud; OUKEHENNICHE Abdelkrim | 28h |  |
| 60 | 6.6 | Livrable plan de test |  | 2d | 2017-05-07 | 2017-05-09 | 59 |  |  | 5.71d | 0d | start no earlier than 2017-05-05 | OUKEHENNICHE Abdelkrim | 14h |  |
| 61 | 6.7 | Validation de plan de test |  | 3h | 2017-05-09 | 2017-05-09 | 60, 59 |  |  | 15.14d | 0d |  | IHADADENE Thinhinane | 3h |  |
| 62 | 6.8 | Dépôt de plan de test | milestone | 0d | 2017-05-09 | 2017-05-09 | 61 |  |  | 15.14d |  | start no earlier than 2017-05-07 | TAKLIt Zina |  |  |
| 63 | 6.9 | Livrable du code source de prototype |  | 4d | 2017-05-09 | 2017-05-13 | 60 |  |  | 5.71d | 0d |  | CHIKHAISSA Mahfoud; OUKEHENNICHE Abdelkrim | 56h |  |
| 64 | 6.10 | Livrable de l'exécutable de prototype |  | 4d | 2017-05-13 | 2017-05-16 | 63 |  |  | 5.71d | 0d |  | BALAMANE Asma | 28h |  |
| 65 | 6.11 | Livrable Manuel de protype |  | 3d | 2017-05-13 | 2017-05-15 | 63 |  |  | 6d | 0d |  | YEBDA Sadia | 21h |  |
| 66 | 6.12 | Validation de livrables |  | 4h | 2017-05-15 | 2017-05-15 | 65 |  |  | 5.71d | 0d |  | IHADADENE Thinhinane; TAKLIt Zina | 8h |  |
| 67 | 6.13 | Dépôt des livrables | milestone | 0d | 2017-05-15 | 2017-05-15 | 66 |  |  | 5.71d | 0d | start no earlier than 2017-05-14 | IHADADENE Thinhinane; TAKLIt Zina |  |  |
| 68 | 7 | **Cloture** |  | 3.86d | 2017-05-16 | 2017-05-21 |  |  |  | 5.71d |  |  |  | 252h |  |
| 69 | 7.1 | Validation final des livreaux |  | 4d | 2017-05-16 | 2017-05-20 | 67, 64 |  |  | 5.71d | 0d |  | BALAMANE Asma; CHIKHAISSA Mahfoud; IHADADENE Thinhinane; OUKEHENNICHE Abdelkrim; TAKLIt Zina; YEBDA Sadia | 168h |  |
| 70 | 7.2 | Présentation final |  | 2d | 2017-05-20 | 2017-05-21 | 69 |  |  | 6.29d |  |  | BALAMANE Asma; CHIKHAISSA Mahfoud; IHADADENE Thinhinane; OUKEHENNICHE Abdelkrim; TAKLIt Zina; YEBDA Sadia | 84h |  |
| 71 | 8 | **Réunion de membre l'équipe** |  | 34.71d | 2017-04-14 A | 2017-05-29 |  | 38% | 21.7d | 0d |  |  |  |  |  |
| 72 | 8.1 | Réunion de membre l'équipe 1 |  | 1d | 2017-04-14 A | 2017-04-14 A |  | 100% |  |  |  | start no earlier than 2017-04-09 |  |  |  |
| 73 | 8.2 | Réunion de membre l'équipe 2 |  | 1d | 2017-04-16 A | 2017-04-17 A |  | 100% |  |  |  | start no earlier than 2017-04-16 |  |  |  |
| 74 | 8.3 | Réunion de membre l'équipe 3 |  | 1d | 2017-04-23 A | 2017-04-24 A |  | 100% |  |  |  | start no earlier than 2017-04-23 |  |  |  |
| 75 | 8.4 | Réunion de membre l'équipe 4 |  | 1d | 2017-04-30 | 2017-05-02 |  |  |  | 20.43d |  | start no earlier than 2017-04-30 |  |  |  |
| 76 | 8.5 | Réunion de membre l'équipe 5 |  | 1d | 2017-05-07 | 2017-05-08 |  |  |  | 15.86d |  | start no earlier than 2017-05-07 |  |  |  |
| 77 | 8.6 | Réunion de membre l'équipe 6 |  | 1d | 2017-05-14 | 2017-05-15 |  |  |  | 10.57d |  | start no earlier than 2017-05-14 |  |  |  |
| 78 | 8.7 | Réunion de membre l'équipe 7 |  | 1d | 2017-05-21 | 2017-05-22 |  |  |  | 5.29d |  | start no earlier than 2017-05-21 |  |  |  |
| 79 | 8.8 | Réunion de membre l'équipe 8 |  | 1d | 2017-05-28 | 2017-05-29 |  |  |  | 0d |  | start no earlier than 2017-05-28 |  |  |  |

Notes:
- 75: Reporter au 1/05/2017

| ID | WBS | Task | Duration | Start | Finish | Complete | Remaining | Total slack | Constraint |
| --- | --- | --- | --- | --- | --- | --- | --- | --- | --- |
| 80 | 9 | **Suivie** | 34d | 2017-04-03 A | 2017-05-22 | 48% | 17.85d | 5.29d |  |
| 81 | 9.1 | **Réunion avec le client** | 20d | 2017-04-03 A | 2017-05-05 | 50% | 10d | 19.29d |  |
| 82 | 9.1.1 | Réunion avec le client 1 | 1d | 2017-04-03 A | 2017-04-04 A | 100% |  |  | start no earlier than 2017-04-03 |
| 83 | 9.1.2 | Réunion avec le client 2 | 1d | 2017-05-04 | 2017-05-05 |  |  | 19.29d | start no earlier than 2017-05-03 |
| 84 | 9.2 | **Mise à jours du planning** | 29.43d | 2017-04-03 A | 2017-05-16 | 43% | 16.82d | 9.86d |  |
| 85 | 9.2.1 | Mise à jours du planning 1 | 1d | 2017-04-03 | 2017-04-04 |  |  | 38.29d | start no earlier than 2017-04-03 |
| 86 | 9.2.2 | Mise à jours du planning 2 | 1d | 2017-04-14 | 2017-04-14 |  |  | 33.71d | start no earlier than 2017-04-10 |
| 87 | 9.2.3 | Mise à jours du planning 3 | 1d | 2017-04-17 A | 2017-04-18 A | 100% |  |  | start no earlier than 2017-04-17 |
| 88 | 9.2.4 | Mise à jours du planning 4 | 1d | 2017-04-24 A | 2017-04-25 A | 100% |  |  | start no earlier than 2017-04-24 |
| 89 | 9.2.5 | Mise à jours du planning 5 | 1d | 2017-05-02 A | 2017-05-04 A | 100% |  |  | start no earlier than 2017-05-01 |
| 90 | 9.2.6 | Mise à jours du planning 6 | 1d | 2017-05-08 | 2017-05-09 |  |  | 15.14d | start no earlier than 2017-05-08 |
| 91 | 9.2.7 | Mise à jours du planning 7 | 1d | 2017-05-15 | 2017-05-16 |  |  | 9.86d | start no earlier than 2017-05-15 |
| 92 | 9.3 | **Suivi Moral & Productivité** | 29.43d | 2017-04-14 A | 2017-05-22 | 51% | 14.29d | 5.29d |  |
| 93 | 9.3.1 | Suivi Moral & Productivité 1 | 1d | 2017-04-14 A | 2017-04-14 A | 100% |  |  | start no earlier than 2017-04-09 |
| 94 | 9.3.2 | Suivi Moral & Productivité 2 | 1d | 2017-04-16 A | 2017-04-17 A | 100% |  |  | start no earlier than 2017-04-16 |
| 95 | 9.3.3 | Suivi Moral & Productivité 3 | 1d | 2017-04-23 A | 2017-04-24 A | 100% |  |  | start no earlier than 2017-04-23 |
| 96 | 9.3.4 | Suivi Moral & Productivité 4 | 1d | 2017-04-30 A | 2017-05-02 | 60% | 0.4d | 20.43d | start no earlier than 2017-04-30 |
| 97 | 9.3.5 | Suivi Moral & Productivité 5 | 1d | 2017-05-07 | 2017-05-08 |  |  | 15.86d | start no earlier than 2017-05-07 |
| 98 | 9.3.6 | Suivi Moral & Productivité 6 | 1d | 2017-05-14 | 2017-05-15 |  |  | 10.57d | start no earlier than 2017-05-14 |
| 99 | 9.3.7 | Suivi Moral & Productivité 7 | 1d | 2017-05-21 | 2017-05-22 |  |  | 5.29d | start no earlier than 2017-05-21 |
