# 2Tech_PlannigPrévisionnel_Version2

Schedule from MS Project, 2017-04-03 to 2019-01-24, 7 hours a day, A marks actual dates.

## Calendars

- 2Tech_CareMe: Mon 13:00-18:00; Tue 14:00-17:00; Wed off; Thu 18:00-23:00; Fri 09:00-17:00; Sat 10:00-21:00; Sun 18:00-23:00. Exceptions (off unless hours are given): 2017-04-09 to 2017-04-13 (Control), 2017-05-01 (1er May).

## Resources

| Resource |
| --- |
| TAKLIt Zina |
| IHADADENE Thinhinane |
| OUKEHENNICHE Abdelkrim |
| BALAMANE Asma |
| CHIKHAISSA Mahfoud |
| YEBDA Sadia |

## Schedule

| ID | WBS | Task | Type | Duration | Start | Finish | Predecessors | Complete | Constraint | Resources | Work | Actual work |
| --- | --- | --- | --- | --- | --- | --- | --- | --- | --- | --- | --- | --- |
| 1 | 1 | **Initialisation et cadrage** |  | 3h | 2017-04-03 A | 2017-04-03 A |  | 100% |  |  | 27h | 27h |
| 2 | 1.1 | Discution de projet |  | 3h | 2017-04-03 A | 2017-04-03 A |  | 100% |  | BALAMANE Asma; CHIKHAISSA Mahfoud; IHADADENE Thinhinane; OUKEHENNICHE Abdelkrim; TAKLIt Zina; YEBDA Sadia | 18h | 18h |
| 3 | 1.2 | Eude d'opportunité |  | 1h | 2017-04-03 A | 2017-04-03 A | 2 | 100% |  | BALAMANE Asma; CHIKHAISSA Mahfoud; IHADADENE Thinhinane; OUKEHENNICHE Abdelkrim; TAKLIt Zina; YEBDA Sadia | 6h | 6h |
| 4 | 1.3 | Lancement de projet |  | 30min | 2017-04-03 A | 2017-04-03 A | 3 | 100% |  | BALAMANE Asma; CHIKHAISSA Mahfoud; IHADADENE Thinhinane; OUKEHENNICHE Abdelkrim; TAKLIt Zina | 2.5h | 2.5h |
| 5 | 1.4 | Affectation initiale des taches |  | 30min | 2017-04-03 A | 2017-04-03 A | 4 | 100% |  | TAKLIt Zina | 0.5h | 0.5h |
| 6 | 2 | **Organisation et structuration de procéder de travail et de document** |  | 8d? | 2017-04-03 A | 2017-04-17 A |  | 100% |  |  | 251h | 251h |
| 7 | 2.1 | Définition de role et de responsabilité |  | 1h | 2017-04-03 A | 2017-04-03 A | 5 | 100% |  | TAKLIt Zina | 1h | 1h |
| 8 | 2.2 | Logo |  | 7d | 2017-04-03 A | 2017-04-09 A | 7 | 100% |  | CHIKHAISSA Mahfoud; OUKEHENNICHE Abdelkrim | 98h | 98h |
| 9 | 2.3 | Charte de codage |  | 6d | 2017-04-09 A | 2017-04-15 A | 8 | 100% |  | OUKEHENNICHE Abdelkrim | 42h | 42h |
| 10 | 2.4 | Workflow de validation |  | 6d | 2017-04-09 A | 2017-04-15 A | 8 | 100% |  | YEBDA Sadia | 42h | 42h |
| 11 | 2.5 | Charte de documents |  | 6d? | 2017-04-09 A | 2017-04-15 A | 8 | 100% |  | IHADADENE Thinhinane | 42h | 42h |
| 12 | 2.6 | Dépo livrables | milestone | 0d | 2017-04-16 A | 2017-04-16 A | 11, 10, 9, 8 | 100% | start no earlier than 2017-04-16 |  |  |  |
| 13 | 2.7 | Plan d'assurance Qualité (PAQ) |  | 4h | 2017-04-17 A | 2017-04-17 A | 12, 24 | 100% | start no earlier than 2017-04-17 | CHIKHAISSA Mahfoud; IHADADENE Thinhinane; OUKEHENNICHE Abdelkrim; YEBDA Sadia | 16h | 16h |
| 14 | 2.8 | Plannig Prévisionnel |  | 4h | 2017-04-17 A | 2017-04-17 A | 12, 24 | 100% | start no earlier than 2017-04-17 | BALAMANE Asma; TAKLIt Zina | 8h | 8h |
| 15 | 2.9 | Validation de livrable |  | 1h | 2017-04-17 A | 2017-04-17 A | 14, 13 | 100% |  | IHADADENE Thinhinane; TAKLIt Zina | 2h | 2h |
| 16 | 2.10 | Dépôt Livrables PAQ et Plannig prévisionnel | milestone | 0d | 2017-04-17 A | 2017-04-17 A | 13, 14, 15 | 100% |  | IHADADENE Thinhinane; TAKLIt Zina |  |  |
| 17 | 3 | **Réponse administrative** |  | 2.71d | 2017-04-09 A | 2017-04-16 A |  | 100% |  |  | 57h | 57h |
| 18 | 3.1 | **Profil de l'équipe** |  | 0.86d | 2017-04-15 A | 2017-04-16 A |  | 100% |  |  | 21h | 21h |
| 19 | 3.1.1 | Cvs |  | 3h | 2017-04-15 A | 2017-04-15 A | 11 | 100% |  | BALAMANE Asma; CHIKHAISSA Mahfoud; IHADADENE Thinhinane; OUKEHENNICHE Abdelkrim; TAKLIt Zina; YEBDA Sadia | 18h | 18h |
| 20 | 3.1.2 | Fiche de l'équipe |  | 3h | 2017-04-15 A | 2017-04-16 A | 19 | 100% |  | TAKLIt Zina | 3h | 3h |
| 21 | 3.2 | Brochure |  | 2d | 2017-04-14 A | 2017-04-15 A | 8 | 100% | start no earlier than 2017-04-14 | CHIKHAISSA Mahfoud | 14h | 14h |
| 22 | 3.3 | Registre de commerce |  | 2d | 2017-04-09 A | 2017-04-11 A | 8 | 100% |  | BALAMANE Asma | 14h | 14h |
| 23 | 3.4 | Validation de livrable |  | 4h | 2017-04-16 A | 2017-04-16 A | 20, 21, 22 | 100% |  | IHADADENE Thinhinane; TAKLIt Zina | 8h | 8h |
| 24 | 3.5 | Dépôt de Livrables | milestone | 0d | 2017-04-16 A | 2017-04-16 A | 23 | 100% |  | TAKLIt Zina |  |  |
| 25 | 4 | Analse des risques |  | 1d | 2017-04-17 A | 2017-04-18 A | 16 | 100% |  | BALAMANE Asma; CHIKHAISSA Mahfoud; IHADADENE Thinhinane; OUKEHENNICHE Abdelkrim; TAKLIt Zina; YEBDA Sadia | 42h | 42h |

Notes:
- 6: Décalage a cause de la seaine de control
- 17: Décalge a cause de la semaine de controle .
- 25: On rajoute et on résolue des risque au fur et à mesure de l'avancement.

| ID | WBS | Task | Type | Duration | Start | Finish | Predecessors | Complete | Remaining | Total slack | Free slack | Constraint | Resources | Work | Actual work |
| --- | --- | --- | --- | --- | --- | --- | --- | --- | --- | --- | --- | --- | --- | --- | --- |
| 26 | 5 | **Réponce thechnique** |  | 18.57d | 2017-04-20 A | 2017-05-14 |  | 95% | 0.99d | 467d |  |  |  | 770h | 747.35h |
| 27 | 5.1 | **Spécification& Conception** |  | 9.43d | 2017-04-20 A | 2017-05-01 |  | 99% | 0.01d | 476.14d |  |  |  | 613h | 612.55h |
| 28 | 5.1.1 | Définition de l'architecture logiciel et matériel de la solution |  | 1d | 2017-04-20 A | 2017-04-21 A | 25 | 100% |  |  |  | finish no earlier than 2017-04-21 | CHIKHAISSA Mahfoud; OUKEHENNICHE Abdelkrim; TAKLIt Zina; BALAMANE Asma; YEBDA Sadia; IHADADENE Thinhinane | 42h | 42h |
| 29 | 5.1.2 | **Spécification de besoins fonctionnelle** |  | 4.86d | 2017-04-20 A | 2017-04-25 A |  | 100% |  |  |  |  |  | 201h | 201h |
| 30 | 5.1.2.1 | Spécification fonctionnelle du ministère |  | 5h | 2017-04-20 A | 2017-04-20 A | 28 | 100% |  |  |  |  | OUKEHENNICHE Abdelkrim | 5h | 5h |
| 31 | 5.1.2.2 | Spécification fonctionnelle du Patients diabétiques |  | 3d | 2017-04-20 A | 2017-04-22 A | 28 | 100% |  |  |  |  | TAKLIt Zina | 21h | 21h |
| 32 | 5.1.2.3 | Spécification fonctionnelle du grossesses à risques |  | 3d | 2017-04-20 A | 2017-04-22 A | 28 | 100% |  |  |  |  | BALAMANE Asma | 21h | 21h |
| 33 | 5.1.2.4 | Spécification fonctionnelle des atteints d'alzheimer |  | 1d | 2017-04-20 A | 2017-04-20 A | 28 | 100% |  |  |  |  | CHIKHAISSA Mahfoud | 7h | 7h |
| 34 | 5.1.2.5 | Spécification fonctionnelle du praticien à la santé |  | 1d | 2017-04-21 A | 2017-04-21 A | 28 | 100% |  |  |  | start no earlier than 2017-04-28 | IHADADENE Thinhinane | 7h | 7h |
| 35 | 5.1.2.6 | Spécification fonctionnelle du transport |  | 2d | 2017-04-21 A | 2017-04-22 A | 28 | 100% |  |  |  | start no earlier than 2017-04-28 | YEBDA Sadia | 14h | 14h |
| 36 | 5.1.2.7 | Validation du spécification fonctionnel |  | 3d | 2017-04-23 A | 2017-04-25 A | 30, 31, 32, 33, 34, 35 | 100% |  |  |  | start no earlier than 2017-04-23 | BALAMANE Asma; CHIKHAISSA Mahfoud; IHADADENE Thinhinane; OUKEHENNICHE Abdelkrim; TAKLIt Zina; YEBDA Sadia | 126h | 126h |
| 37 | 5.1.3 | Spécification de besoin technique |  | 3h | 2017-04-25 A | 2017-04-25 | 36 | 95% | 0.15h | 480.29d |  | start no earlier than 2017-04-25 | IHADADENE Thinhinane; OUKEHENNICHE Abdelkrim; CHIKHAISSA Mahfoud | 9h | 8.55h |
| 38 | 5.1.4 | Découpage modulaire de la solution |  | 3h | 2017-04-25 A | 2017-04-25 A | 36 | 100% |  |  |  | start no earlier than 2017-04-25 | BALAMANE Asma; TAKLIt Zina; YEBDA Sadia | 9h | 9h |
| 39 | 5.1.5 | **Elaboration des diagrammes UML** |  | 3.43d | 2017-04-27 A | 2017-04-30 A |  | 100% |  |  |  |  | BALAMANE Asma; YEBDA Sadia; CHIKHAISSA Mahfoud; IHADADENE Thinhinane; OUKEHENNICHE Abdelkrim; TAKLIt Zina | 310h | 310h |
| 40 | 5.1.5.1 | module gestion de patient |  | 4d | 2017-04-27 A | 2017-04-29 A | 37, 38, 36 | 100% |  |  |  | start no earlier than 2017-04-27 | TAKLIt Zina | 28h | 28h |
| 41 | 5.1.5.2 | module de transport |  | 3d | 2017-04-27 A | 2017-04-29 A | 37, 38, 36 | 100% |  |  |  | start no earlier than 2017-04-27 | YEBDA Sadia | 21h | 21h |
| 42 | 5.1.5.3 | module de suivie et de traitement |  | 4d | 2017-04-27 A | 2017-04-29 A | 37, 38, 36 | 100% |  |  |  | start no earlier than 2017-04-27 | BALAMANE Asma | 28h | 28h |
| 43 | 5.1.5.4 | module de prélèvement |  | 2d | 2017-04-29 A | 2017-04-30 A | 37, 38, 36 | 100% |  |  |  | start no earlier than 2017-04-29 | IHADADENE Thinhinane | 14h | 14h |
| 44 | 5.1.5.5 | module d'alerte et de rappelle et de planning |  | 3d | 2017-04-27 A | 2017-04-29 A | 37, 38, 36 | 100% |  |  |  | start no earlier than 2017-04-27 | CHIKHAISSA Mahfoud | 21h | 21h |
| 45 | 5.1.6 | Réunion de validation du diagramme |  | 1d | 2017-05-01 A | 2017-05-01 A | 39, 40, 41, 42, 43, 44 | 100% |  |  |  | start no earlier than 2017-05-01 | BALAMANE Asma; CHIKHAISSA Mahfoud; IHADADENE Thinhinane; OUKEHENNICHE Abdelkrim; TAKLIt Zina; YEBDA Sadia | 42h | 42h |
| 46 | 5.2 | Livrable Fiche technique de la solution |  | 4d | 2017-05-05 A | 2017-05-08 A | 45 | 100% |  |  |  | start no earlier than 2017-05-04 | IHADADENE Thinhinane | 28h | 28h |
| 47 | 5.3 | livrable des spécification fonctionnelles |  | 6d | 2017-05-04 A | 2017-05-08 A | 45 | 100% |  |  |  | start no earlier than 2017-05-04 | YEBDA Sadia | 42h | 42h |
| 48 | 5.4 | livrable des spécification technique |  | 4d | 2017-05-05 A | 2017-05-08 A | 45 | 100% |  |  |  | start no earlier than 2017-05-04 | OUKEHENNICHE Abdelkrim | 28h | 28h |
| 49 | 5.5 | Planning prévisionnel |  | 16h | 2017-05-02 A | 2017-05-04 A | 45 | 100% |  |  |  | finish no earlier than 2017-05-04 | TAKLIt Zina | 16h | 16h |
| 50 | 5.6 | Validation de livrables |  | 2h | 2017-05-08 A | 2017-05-08 A | 46, 47, 48 | 100% |  |  |  | start no earlier than 2017-05-06 | IHADADENE Thinhinane; TAKLIt Zina | 4h | 4h |
| 51 | 5.7 | Dépôt de livrables | milestone | 0d | 2017-05-08 A | 2017-05-08 A | 50 | 100% |  |  |  |  | TAKLIt Zina; OUKEHENNICHE Abdelkrim; IHADADENE Thinhinane |  |  |
| 52 | 5.8 | Rapport réponse technique |  | 5d | 2017-05-09 A | 2017-05-14 | 51 | 48% | 2.6d | 467d | 0d |  | IHADADENE Thinhinane | 35h | 16.8h |
| 53 | 5.9 | Validation rapport de réponse thechnique |  | 2h | 2017-05-14 | 2017-05-14 | 52 |  |  | 467d | 0d |  | BALAMANE Asma; IHADADENE Thinhinane | 4h |  |
| 54 | 5.10 | Dépôt de rapport réponse technique | milestone | 0d | 2017-05-14 | 2017-05-14 | 53 |  |  | 467d |  |  | IHADADENE Thinhinane |  |  |

| ID | WBS | Task | Type | Duration | Start | Finish | Predecessors | Complete | Remaining | Total slack | Free slack | Constraint | Resources | Work | Actual work |
| --- | --- | --- | --- | --- | --- | --- | --- | --- | --- | --- | --- | --- | --- | --- | --- |
| 55 | 6 | **Réponse financière** |  | 4.57d | 2017-05-08 | 2017-05-14 | 51 |  |  | 466.29d |  |  |  | 92h |  |
| 56 | 6.1 | Etude financière |  | 5d | 2017-05-08 | 2017-05-12 |  |  |  | 468.14d | 1.57d |  | TAKLIt Zina [50%]; YEBDA Sadia [50%] | 35h |  |
| 57 | 6.2 | Rapport de réponse financière |  | 7d | 2017-05-08 | 2017-05-14 |  |  |  | 466.29d | 0d |  | TAKLIt Zina [50%]; YEBDA Sadia [50%] | 49h |  |
| 58 | 6.3 | Validation du rapport réponse finacière |  | 4h | 2017-05-14 | 2017-05-14 | 57, 56 |  |  | 467d | 0d |  | CHIKHAISSA Mahfoud; TAKLIt Zina | 8h |  |
| 59 | 6.4 | Dépôt du rapport d'étude financière | milestone | 0d | 2017-05-14 | 2017-05-14 | 58 |  |  | 467d |  |  | TAKLIt Zina; YEBDA Sadia |  |  |
| 60 | 7 | **Prototype** |  | 32.86d | 2017-04-25 A | 2017-06-10 |  | 24% | 25.08d | 447.43d |  |  |  | 554.61h | 138.65h |
| 61 | 7.1 | Spécification de prototype |  | 4d | 2017-04-25 A | 2017-04-29 A | 37, 38, 36 | 100% |  |  |  |  | OUKEHENNICHE Abdelkrim | 28h | 28h |
| 62 | 7.2 | Livrable de spécification prototype |  | 6d | 2017-05-05 A | 2017-05-09 A | 45 | 100% |  |  |  | start no earlier than 2017-05-04 | OUKEHENNICHE Abdelkrim | 42h | 42h |
| 63 | 7.3 | Validation de Livrable de spécification prototype |  | 2h | 2017-05-09 A | 2017-05-09 A | 62 | 100% |  |  |  | start no earlier than 2017-05-06 | TAKLIt Zina | 2h | 2h |
| 64 | 7.4 | Dépôt de livrable de spécification prototype | milestone | 0d | 2017-05-09 A | 2017-05-09 A | 63 | 100% |  |  |  |  | OUKEHENNICHE Abdelkrim |  |  |
| 65 | 7.5 | Developpement de prototype |  | 22d | 2017-05-09 A | 2017-05-29 | 64, 45 | 4% | 21.1d | 450.41d | 0d |  | CHIKHAISSA Mahfoud [5%]; OUKEHENNICHE Abdelkrim; TAKLIt Zina [5%] | 147.07h | 12.6h |
| 66 | 7.6 | Livrable plan de test |  | 11d | 2017-05-12 A | 2017-06-06 | 65 | 70% | 3.3d | 447.49d | 0d | start no earlier than 2017-05-05 | BALAMANE Asma | 77h | 53.9h |
| 67 | 7.7 | Validation de plan de test |  | 2d | 2017-06-07 A | 2017-06-09 | 66, 65 | 1% | 1.98d | 447.57d | 0d |  | IHADADENE Thinhinane [60%]; TAKLIt Zina [40%] | 12.54h | 0.15h |
| 68 | 7.8 | Dépôt de plan de test | milestone | 0d | 2017-06-09 | 2017-06-09 | 67 |  |  | 447.57d |  | start no earlier than 2017-06-09 | TAKLIt Zina |  |  |
| 69 | 7.9 | Livrable du code source de prototype |  | 1d | 2017-06-06 | 2017-06-08 | 66 |  |  | 449.06d |  |  | OUKEHENNICHE Abdelkrim | 7h |  |
| 70 | 7.10 | Livrable de l'exécutable de prototype |  | 3d | 2017-06-06 | 2017-06-09 | 66 |  |  | 447.43d | 0d |  | BALAMANE Asma | 21h |  |
| 71 | 7.11 | Livrable Manuel de protype |  | 28.86d | 2017-05-14 | 2017-06-08 | 64 |  |  | 446.86d | 0d | finish no earlier than 2017-06-08 | CHIKHAISSA Mahfoud | 202h |  |
| 72 | 7.12 | Validation de livrables |  | 4h | 2017-06-08 | 2017-06-09 | 71 |  |  | 447.86d | 0d |  | IHADADENE Thinhinane; TAKLIt Zina | 8h |  |
| 73 | 7.13 | Validation final des livreaux |  | 8h | 2017-06-09 | 2017-06-10 | 72 |  |  | 447.43d | 0d |  | IHADADENE Thinhinane [50%]; TAKLIt Zina [50%] | 8h |  |
| 74 | 7.14 | Dépôt des livrables | milestone | 0d | 2017-06-10 | 2017-06-10 | 72, 70, 73 |  |  | 447.43d |  | start no earlier than 2017-05-14 | IHADADENE Thinhinane; TAKLIt Zina |  |  |
| 75 | 8 | **Cloture** |  | 461.71d | 2017-05-21 | 2019-01-24 |  |  |  | 0d |  |  |  | 1764h |  |
| 76 | 8.1 | Préparation de Présentation final |  | 700d | 2017-05-21 | 2019-01-24 |  |  |  | 0d |  | start no earlier than 2017-05-21 | IHADADENE Thinhinane [80%]; TAKLIt Zina [30%]; YEBDA Sadia [80%]; BALAMANE Asma [10%]; CHIKHAISSA Mahfoud [10%]; OUKEHENNICHE Abdelkrim [10%] | 1764h |  |
| 77 | 8.2 | Présentation final | milestone | 0d | 2019-01-24 | 2019-01-24 | 76 |  |  | 0d |  |  | BALAMANE Asma; CHIKHAISSA Mahfoud; IHADADENE Thinhinane; OUKEHENNICHE Abdelkrim; TAKLIt Zina; YEBDA Sadia |  |  |
| 78 | 9 | **Réunion de membre l'équipe** |  | 34.71d | 2017-04-14 A | 2017-05-29 |  | 63% | 13.02d | 455.43d |  |  |  |  |  |
| 79 | 9.1 | Réunion de membre l'équipe 1 |  | 1d | 2017-04-14 A | 2017-04-14 A |  | 100% |  |  |  | start no earlier than 2017-04-09 |  |  |  |
| 80 | 9.2 | Réunion de membre l'équipe 2 |  | 1d | 2017-04-16 A | 2017-04-17 A |  | 100% |  |  |  | start no earlier than 2017-04-16 |  |  |  |
| 81 | 9.3 | Réunion de membre l'équipe 3 |  | 1d | 2017-04-23 A | 2017-04-24 A |  | 100% |  |  |  | start no earlier than 2017-04-23 |  |  |  |
| 82 | 9.4 | Réunion de membre l'équipe 4 |  | 1d | 2017-04-30 A | 2017-05-02 A |  | 100% |  |  |  | start no earlier than 2017-04-30 |  |  |  |
| 83 | 9.5 | Réunion de membre l'équipe 5 |  | 1d | 2017-05-07 A | 2017-05-08 A |  | 100% |  |  |  | start no earlier than 2017-05-07 |  |  |  |
| 84 | 9.6 | Réunion de membre l'équipe 6 |  | 1d | 2017-05-14 | 2017-05-15 |  |  |  | 466d |  | start no earlier than 2017-05-14 |  |  |  |
| 85 | 9.7 | Réunion de membre l'équipe 7 |  | 1d | 2017-05-21 | 2017-05-22 |  |  |  | 460.71d |  | start no earlier than 2017-05-21 |  |  |  |
| 86 | 9.8 | Réunion de membre l'équipe 8 |  | 1d | 2017-05-28 | 2017-05-29 |  |  |  | 455.43d |  | start no earlier than 2017-05-28 |  |  |  |

Notes:
- 82: Reporter au 1/05/2017

| ID | WBS | Task | Duration | Start | Finish | Complete | Remaining | Total slack | Constraint |
| --- | --- | --- | --- | --- | --- | --- | --- | --- | --- |
| 87 | 10 | **Suivie** | 34d | 2017-04-03 A | 2017-05-22 | 56% | 14.88d | 460.71d |  |
| 88 | 10.1 | **Réunion avec le client** | 20d | 2017-04-03 A | 2017-05-05 | 50% | 10d | 474.71d |  |
| 89 | 10.1.1 | Réunion avec le client 1 | 1d | 2017-04-03 A | 2017-04-04 A | 100% |  |  | start no earlier than 2017-04-03 |
| 90 | 10.1.2 | Réunion avec le client 2 | 1d | 2017-05-04 | 2017-05-05 |  |  | 474.71d | start no earlier than 2017-05-03 |
| 91 | 10.2 | **Mise à jours du planning** | 29.43d | 2017-04-03 A | 2017-05-16 | 43% | 16.82d | 465.29d |  |
| 92 | 10.2.1 | Mise à jours du planning 1 | 1d | 2017-04-03 | 2017-04-04 |  |  | 493.71d | start no earlier than 2017-04-03 |
| 93 | 10.2.2 | Mise à jours du planning 2 | 1d | 2017-04-14 | 2017-04-14 |  |  | 489.14d | start no earlier than 2017-04-10 |
| 94 | 10.2.3 | Mise à jours du planning 3 | 1d | 2017-04-17 A | 2017-04-18 A | 100% |  |  | start no earlier than 2017-04-17 |
| 95 | 10.2.4 | Mise à jours du planning 4 | 1d | 2017-04-24 A | 2017-04-25 A | 100% |  |  | start no earlier than 2017-04-24 |
| 96 | 10.2.5 | Mise à jours du planning 5 | 1d | 2017-05-02 A | 2017-05-04 A | 100% |  |  | start no earlier than 2017-05-01 |
| 97 | 10.2.6 | Mise à jours du planning 6 | 1d | 2017-05-08 | 2017-05-09 |  |  | 470.57d | start no earlier than 2017-05-08 |
| 98 | 10.2.7 | Mise à jours du planning 7 | 1d | 2017-05-15 | 2017-05-16 |  |  | 465.29d | start no earlier than 2017-05-15 |
| 99 | 10.3 | **Suivi Moral & Productivité** | 29.43d | 2017-04-14 A | 2017-05-22 | 71% | 8.41d | 460.71d |  |
| 100 | 10.3.1 | Suivi Moral & Productivité 1 | 1d | 2017-04-14 A | 2017-04-14 A | 100% |  |  | start no earlier than 2017-04-09 |
| 101 | 10.3.2 | Suivi Moral & Productivité 2 | 1d | 2017-04-16 A | 2017-04-17 A | 100% |  |  | start no earlier than 2017-04-16 |
| 102 | 10.3.3 | Suivi Moral & Productivité 3 | 1d | 2017-04-23 A | 2017-04-24 A | 100% |  |  | start no earlier than 2017-04-23 |
| 103 | 10.3.4 | Suivi Moral & Productivité 4 | 1d | 2017-04-30 A | 2017-05-02 A | 100% |  |  | start no earlier than 2017-04-30 |
| 104 | 10.3.5 | Suivi Moral & Productivité 5 | 1d | 2017-05-07 A | 2017-05-08 A | 100% |  |  | start no earlier than 2017-05-07 |
| 105 | 10.3.6 | Suivi Moral & Productivité 6 | 1d | 2017-05-14 | 2017-05-15 |  |  | 466d | start no earlier than 2017-05-14 |
| 106 | 10.3.7 | Suivi Moral & Productivité 7 | 1d | 2017-05-21 | 2017-05-22 |  |  | 460.71d | start no earlier than 2017-05-21 |
