# 2Tech_CareMe_PlanningPrévisionnel

Schedule from MS Project, 2017-10-02 to 2019-10-02, 7 hours a day, costs in DA‏.

## Calendars

- 2Tech_CareMe: Mon-Fri 09:00-12:00, 14:00-18:00; Sat-Sun off.

## Resources

| Resource | Rate |
| --- | --- |
| TAKLIT Zina | 714.29 |
| BALAMANE Asma | 500 |
| IHADADENE Thinhinane | 571.43 |
| YEBDA Sadia | 500 |
| OUKHENNICHE Abdelkrim | 500 |
| CHIKHAISSA Mahfoud | 500 |
| Expert sécurité |  |
| Architecte | 800 |
| Analyste | 800 |
| Testeur | 800 |
| Equipe formateurs |  |

## Schedule

| ID | WBS | Task | Duration | Start | Finish | Predecessors | Total slack | Free slack | Constraint | Resources | Work | Cost |
| --- | --- | --- | --- | --- | --- | --- | --- | --- | --- | --- | --- | --- |
| 1 | 1 | **Projet Care_Me** | 522.71d | 2017-10-02 | 2019-10-02 |  | 0d |  |  |  | 9962.55h | 6,052,194.56 |
| 2 | 1.1 | **Expression de besoins** | 62.9d | 2017-10-02 | 2017-12-27 |  | 37.74d | 0d |  |  | 549.6h | 356,185.72 |
| 3 | 1.1.1 | **Initiation** | 31.29d | 2017-10-02 | 2017-11-14 |  | 38.6d |  |  |  | 231h | 175,228.58 |
| 4 | 1.1.1.1 | S'informer sur le projet auprès de commanditaire | 4h | 2017-10-02 | 2017-10-02 |  | 34.87d | 0d |  | TAKLIT Zina | 4h | 2,857.14 |
| 5 | 1.1.1.2 | Etude d'oportunité | 2d | 2017-10-02 | 2017-10-04 | 4 | 34.87d | 0d |  | TAKLIT Zina | 14h | 10,000 |
| 6 | 1.1.1.3 | Formuler la note de cadrage | 2d | 2017-10-04 | 2017-10-06 | 5 | 34.87d | 0.86d |  | TAKLIT Zina | 14h | 10,000 |
| 7 | 1.1.1.4 | Réunion de lançement de projet avec le client | 4h | 2017-10-09 | 2017-10-09 | 6 | 37.74d | 0d | finish no earlier than 2017-10-09 | TAKLIT Zina; IHADADENE Thinhinane | 8h | 5,142.86 |
| 8 | 1.1.1.5 | **Etude de besoin** | 23d | 2017-10-10 | 2017-11-09 |  | 37.74d | 0d |  |  | 175h | 135,800 |
| 9 | 1.1.1.5.1 | Etude de besoin et de l'existant | 18d | 2017-10-10 | 2017-11-02 | 7 | 37.74d | 0d |  | Analyste; OUKHENNICHE Abdelkrim [60%] | 133h | 104,300 |
| 10 | 1.1.1.5.2 | Diagnostic de faisabilité | 1w | 2017-11-03 | 2017-11-09 | 9 | 37.74d | 0d |  | Analyste; OUKHENNICHE Abdelkrim [60%] | 42h | 31,500 |
| 11 | 1.1.1.6 | **Négociation avec le commanditaire** | 2.29d | 2017-11-10 | 2017-11-14 |  | 55.36d |  |  |  | 16h | 11,428.57 |
| 12 | 1.1.1.6.1 | Réunion de lancement de négociation avec le commanditaire | 5h | 2017-11-10 | 2017-11-10 | 10 | 52.02d | 0d |  | TAKLIT Zina | 5h | 3,571.43 |
| 13 | 1.1.1.6.2 | Engagement (Elaboration de contrat ) | 1d | 2017-11-10 | 2017-11-13 | 12 | 52.02d | 0d |  | TAKLIT Zina | 7h | 5,000 |
| 14 | 1.1.1.6.3 | Réunion de colture de négociation | 4h | 2017-11-13 | 2017-11-14 | 13 | 52.02d | 0d |  | TAKLIT Zina | 4h | 2,857.14 |
| 15 | 1.1.2 | **Planification du projet** | 14d | 2017-11-14 | 2017-12-04 |  | 55.36d |  |  |  | 161h | 101,200 |
| 16 | 1.1.2.1 | Procédure de travaille | 3d | 2017-11-14 | 2017-11-17 | 14 | 63.02d |  |  | IHADADENE Thinhinane | 21h | 12,000 |
| 17 | 1.1.2.2 | Evaluation de charge et de délais | 10d | 2017-11-14 | 2017-11-28 | 14 | 56.02d |  |  | BALAMANE Asma [30%]; TAKLIT Zina | 42h | 25,500 |
| 18 | 1.1.2.3 | **Analyse du risque** | 14d | 2017-11-14 | 2017-12-04 | 14 | 55.36d |  |  |  | 98h | 63,700 |
| 19 | 1.1.2.3.1 | Identifier les risques | 6d | 2017-11-14 | 2017-11-22 |  | 52.02d | 0d |  | Analyste; OUKHENNICHE Abdelkrim [50%] | 42h | 27,300 |
| 20 | 1.1.2.3.2 | Analyse du risque | 4d | 2017-11-22 | 2017-11-28 | 19 | 52.02d | 0d |  | Analyste; OUKHENNICHE Abdelkrim [50%] | 28h | 18,200 |
| 21 | 1.1.2.3.3 | Plan d'action | 2d | 2017-11-28 | 2017-11-30 | 20 | 52.02d | 0d |  | Analyste; OUKHENNICHE Abdelkrim [50%] | 14h | 9,100 |
| 22 | 1.1.2.3.4 | Suivie de plan d'action | 2d | 2017-11-30 | 2017-12-04 | 21 | 52.02d |  |  | Analyste; OUKHENNICHE Abdelkrim [50%] | 14h | 9,100 |
| 23 | 1.1.3 | **Recencement de spécification** | 33.5d | 2017-11-10 | 2017-12-27 | 8 | 37.74d |  |  |  | 154.8h | 77,757.14 |
| 24 | 1.1.3.1 | Recencement de spécification fonctionnelle | 25d | 2017-11-10 | 2017-12-14 |  | 37.74d | 0d |  | BALAMANE Asma [70%]; YEBDA Sadia [20%] | 70h | 35,000 |
| 25 | 1.1.3.2 | Recencement de spécification non fonctionnelle | 4d | 2017-11-10 | 2017-11-15 |  | 58.74d | 21d |  | CHIKHAISSA Mahfoud | 28h | 14,000 |
| 26 | 1.1.3.3 | Préorisation de spécification | 3d | 2017-12-15 | 2017-12-19 | 24, 25 | 37.74d | 0d |  | CHIKHAISSA Mahfoud; BALAMANE Asma [30%] | 13.3h | 6,650 |

| ID | WBS | Task | Duration | Start | Finish | Predecessors | Total slack | Free slack | Constraint | Resources | Work | Cost |
| --- | --- | --- | --- | --- | --- | --- | --- | --- | --- | --- | --- | --- |
| 27 | 1.1.3.4 | **Expression de cas d'utilisation** | 33.5d | 2017-11-10 | 2017-12-27 |  | 38.14d |  |  |  | 43.5h | 22,107.14 |
| 28 | 1.1.3.4.1 | Diagramme de cas d'utilisation | 3.5d | 2017-12-20 | 2017-12-25 | 26 | 37.74d | 0d | start no earlier than 2017-11-09 | YEBDA Sadia | 24.5h | 12,250 |
| 29 | 1.1.3.4.2 | Documentation de cas d'utilisation | 2d | 2017-12-25 | 2017-12-27 | 28 | 37.74d | 0d |  | YEBDA Sadia | 14h | 7,000 |
| 30 | 1.1.3.4.3 | Validation du modèle de besoin | 5h | 2017-11-10 | 2017-11-10 |  | 67.6d |  |  | IHADADENE Thinhinane | 5h | 2,857.14 |
| 31 | 1.1.4 | Réunion de validation du modèle de besoins avec le client | 0.4d | 2017-12-27 | 2017-12-27 | 29 | 37.74d |  |  | TAKLIT Zina | 2.8h | 2,000 |
| 32 | 1.2 | **Analyse de besoin** | 30.67d | 2017-12-27 | 2018-02-08 |  | 37.74d | 0d |  |  | 782.6h | 440,200 |
| 33 | 1.2.1 | **Analyse métier** | 14d | 2017-12-27 | 2018-01-16 | 2 | 37.74d | 0d |  |  | 254.8h | 145,600 |
| 34 | 1.2.1.1 | Définir les acteurs métier | 14d | 2017-12-27 | 2018-01-16 |  | 37.74d |  |  | YEBDA Sadia [60%] | 58.8h | 29,400 |
| 35 | 1.2.1.2 | Définir les entité manipuler par le système | 14d | 2017-12-27 | 2018-01-16 |  | 37.74d |  |  | BALAMANE Asma [50%] | 49h | 24,500 |
| 36 | 1.2.1.3 | Définer les relation entre les acteurs/entité du système | 14d | 2017-12-27 | 2018-01-16 |  | 37.74d |  |  | BALAMANE Asma [50%]; IHADADENE Thinhinane [50%] | 98h | 52,500 |
| 37 | 1.2.1.4 | Suivie et Validation du concept | 14d | 2017-12-27 | 2018-01-16 |  | 37.74d |  |  | Analyste [50%] | 49h | 39,200 |
| 38 | 1.2.2 | **Diagramme d'analyse** | 16.67d | 2018-01-16 | 2018-02-08 | 33 | 37.74d |  |  |  | 371h | 193,000 |
| 39 | 1.2.2.1 | Diagramme de séquence | 14d | 2018-01-16 | 2018-02-05 |  | 40.41d |  |  | YEBDA Sadia | 98h | 49,000 |
| 40 | 1.2.2.2 | Diagramme d'activité | 14d | 2018-01-16 | 2018-02-05 |  | 40.41d |  |  | BALAMANE Asma | 98h | 49,000 |
| 41 | 1.2.2.3 | Diagramme d'état de transition | 10d | 2018-01-16 | 2018-01-30 |  | 44.41d |  |  | CHIKHAISSA Mahfoud | 70h | 35,000 |
| 42 | 1.2.2.4 | Suivie et validation du diagramme | 16.67d | 2018-01-16 | 2018-02-08 |  | 37.74d |  |  | IHADADENE Thinhinane [90%] | 105h | 60,000 |
| 43 | 1.2.3 | Analyse sécuritaire du système | 10d | 2018-01-16 | 2018-01-30 | 33 | 44.41d |  |  | OUKHENNICHE Abdelkrim | 70h | 35,000 |
| 44 | 1.2.4 | Validation de l'analyse | 14d | 2018-01-16 | 2018-02-05 | 33 | 40.41d |  |  | Analyste; TAKLIT Zina [60%]; IHADADENE Thinhinane [10%] | 86.8h | 66,600 |
| 45 | 1.3 | **Conception** | 128.36d | 2018-02-08 | 2018-08-07 | 32 | 37.74d | 0d |  |  | 2593.65h | 1,621,220.64 |
| 46 | 1.3.1 | **Conception général** | 71.5d | 2018-02-08 | 2018-05-21 |  | 37.74d | 0d |  |  | 1680.7h | 1,002,374.96 |
| 47 | 1.3.1.1 | **Architecte** | 39d | 2018-02-08 | 2018-04-04 |  | 37.74d | 0d |  |  | 1010.1h | 608,350 |
| 48 | 1.3.1.1.1 | Etude d'architecture matériel | 10d | 2018-02-08 | 2018-02-22 |  | 41.74d | 4d |  | Architecte; OUKHENNICHE Abdelkrim [60%]; TAKLIT Zina [70%] | 154h | 108,500 |
| 49 | 1.3.1.1.2 | Etude d'architecture logiciel | 14d | 2018-02-08 | 2018-02-28 |  | 37.74d | 0d |  | IHADADENE Thinhinane; YEBDA Sadia | 147h | 77,000 |
| 50 | 1.3.1.1.3 | Réunion de choix de l'architecture avec le client | 1d | 2018-02-28 | 2018-03-01 | 48, 49 | 37.74d | 0d |  | TAKLIT Zina | 7h | 5,000 |
| 51 | 1.3.1.1.4 | Diagramme de composant | 6d | 2018-03-01 | 2018-03-09 | 50 | 37.74d | 0d |  | OUKHENNICHE Abdelkrim; TAKLIT Zina | 71.4h | 42,000 |
| 52 | 1.3.1.1.5 | Diagramme de déploiment | 5d | 2018-03-01 | 2018-03-08 | 50 | 38.74d | 1d |  | CHIKHAISSA Mahfoud; YEBDA Sadia [70%] | 52.5h | 26,250 |
| 53 | 1.3.1.1.6 | Découpage en module | 10d | 2018-03-09 | 2018-03-23 | 52, 51 | 37.74d | 0d |  | Architecte; BALAMANE Asma; CHIKHAISSA Mahfoud; IHADADENE Thinhinane; OUKHENNICHE Abdelkrim; TAKLIT Zina; YEBDA Sadia | 490h | 286,000 |
| 54 | 1.3.1.1.7 | Valider l'architecture | 8d | 2018-03-23 | 2018-04-04 | 53 | 37.74d |  |  | Architecte; OUKHENNICHE Abdelkrim [20%]; TAKLIT Zina | 88.2h | 63,600 |

| ID | WBS | Task | Duration | Start | Finish | Predecessors | Total slack | Free slack | Resources | Work | Cost |
| --- | --- | --- | --- | --- | --- | --- | --- | --- | --- | --- | --- |
| 55 | 1.3.1.2 | **Modèle de donné** | 32.5d | 2018-04-04 | 2018-05-21 | 47 | 37.74d | 0d |  | 553h | 334,775 |
| 56 | 1.3.1.2.1 | Modèle conceptuel de donné | 20d | 2018-04-04 | 2018-05-02 |  | 45.24d | 0d | BALAMANE Asma [90%]; Architecte [20%]; TAKLIT Zina [90%] | 280h | 175,400 |
| 57 | 1.3.1.2.2 | Valider MCD | 5d | 2018-05-02 | 2018-05-09 | 56 | 45.24d |  | Architecte [20%]; BALAMANE Asma [80%]; TAKLIT Zina [20%] | 42h | 24,600 |
| 58 | 1.3.1.2.3 | Diagramme de classe métier | 3.5w | 2018-04-04 | 2018-04-30 |  | 37.74d | 0d | OUKHENNICHE Abdelkrim [90%]; YEBDA Sadia [20%]; Architecte [10%] | 147h | 77,175.01 |
| 59 | 1.3.1.2.4 | Valider les diagrammes de classe métier | 15d | 2018-04-30 | 2018-05-21 | 58 | 37.74d |  | IHADADENE Thinhinane; Architecte [40%] | 84h | 57,600 |
| 60 | 1.3.1.3 | Prototype des interfaces utilisateurs | 25d | 2018-04-04 | 2018-05-09 | 47 | 44.24d | 0d | CHIKHAISSA Mahfoud; OUKHENNICHE Abdelkrim [2%] | 108.5h | 54,250 |
| 61 | 1.3.1.4 | Réunion de validation des interfaces utilisateurs | 1d | 2018-05-09 | 2018-05-10 | 60 | 44.24d |  | TAKLIT Zina [60%]; CHIKHAISSA Mahfoud | 9.1h | 5,000 |
| 62 | 1.3.2 | **conception détaillé** | 56.86d | 2018-05-21 | 2018-08-07 | 46 | 37.74d |  |  | 912.95h | 618,845.72 |
| 63 | 1.3.2.1 | **Base de donné** | 19d | 2018-05-21 | 2018-06-15 |  | 75.6d |  |  | 115.85h | 72,520 |
| 64 | 1.3.2.1.1 | Modèle relationnel de donnée | 7d | 2018-05-21 | 2018-05-30 |  | 75.6d | 0d | Architecte [10%]; BALAMANE Asma [70%]; TAKLIT Zina [55%] | 38.85h | 26,670 |
| 65 | 1.3.2.1.2 | Plan de teste du BDD | 7d | 2018-05-30 | 2018-06-08 | 64 | 75.6d | 0d | BALAMANE Asma | 49h | 24,500 |
| 66 | 1.3.2.1.3 | Validation du BDD | 5d | 2018-06-08 | 2018-06-15 | 65, 64 | 75.6d | 0d | Architecte [70%]; BALAMANE Asma [10%] | 28h | 21,350 |
| 67 | 1.3.2.2 | **Conception du modules** | 26d | 2018-05-21 | 2018-06-26 | 55 | 37.74d |  |  | 499.1h | 278,340 |
| 68 | 1.3.2.2.1 | Diagramme de classe de conception | 1mo | 2018-05-21 | 2018-06-18 |  | 74.6d |  | OUKHENNICHE Abdelkrim [70%]; YEBDA Sadia [60%]; Architecte [10%] | 196h | 102,200 |
| 69 | 1.3.2.2.2 | Définir les algorithme pour les cas particulier et complexe | 10d | 2018-05-21 | 2018-06-04 |  | 80.6d | 4d | IHADADENE Thinhinane; TAKLIT Zina [20%] | 84h | 50,000 |
| 70 | 1.3.2.2.3 | Conception des procédure d'interaction avec les différents appareil externes | 14d | 2018-05-21 | 2018-06-08 |  | 37.74d | 0d | CHIKHAISSA Mahfoud [80%]; Architecte [5%]; TAKLIT Zina [20%] | 102.9h | 57,120 |
| 71 | 1.3.2.2.4 | Plan de teste unitaire de chaque module | 4d | 2018-06-08 | 2018-06-14 | 70, 69 | 76.6d |  | Testeur | 28h | 22,400 |
| 72 | 1.3.2.2.5 | Définir le contenue de différents prototype | 12d | 2018-06-08 | 2018-06-26 | 70 | 37.74d | 0d | CHIKHAISSA Mahfoud [90%]; OUKHENNICHE Abdelkrim [5%]; Architecte [10%] | 88.2h | 46,620 |
| 73 | 1.3.2.3 | **Conception des interfaces** | 30d | 2018-06-26 | 2018-08-07 | 72 | 37.74d |  |  | 280h | 155,900 |
| 74 | 1.3.2.3.1 | Conception des différentes interfaces système | 20d | 2018-06-26 | 2018-07-24 |  | 37.74d | 0d | CHIKHAISSA Mahfoud [80%]; OUKHENNICHE Abdelkrim | 147h | 73,500 |
| 75 | 1.3.2.3.2 | Désign des interfaces mobile du système | 10d | 2018-07-24 | 2018-08-07 | 74 | 37.74d | 0d | CHIKHAISSA Mahfoud; TAKLIT Zina [50%] | 105h | 60,000 |
| 76 | 1.3.2.3.3 | Définition des différent niveaux de contrôle des produits logicielles | 4d | 2018-06-26 | 2018-07-02 |  | 63.74d | 26d | Architecte | 28h | 22,400 |
| 77 | 1.3.2.4 | Conception de mesure de sécurité | 10d | 2018-06-26 | 2018-07-10 | 72 | 57.74d | 20d | Expert sécurité [0.1%] |  | 100,000 |
| 78 | 1.3.2.5 | Réunion de validation de conception | 6h | 2018-08-07 | 2018-08-07 | 75, 76, 77 | 37.74d |  | Architecte; TAKLIT Zina; OUKHENNICHE Abdelkrim | 18h | 12,085.71 |

| ID | WBS | Task | Type | Duration | Start | Finish | Predecessors | Total slack | Free slack | Constraint | Resources | Work | Cost |
| --- | --- | --- | --- | --- | --- | --- | --- | --- | --- | --- | --- | --- | --- |
| 79 | 1.4 | **Réalisation** |  | 148.19d | 2018-06-15 | 2019-01-09 |  | 75.6d |  |  |  | 3125.5h | 1,834,580 |
| 80 | 1.4.1 | **Réalisation de la BDD** |  | 45d | 2018-06-15 | 2018-08-17 |  | 293.65d |  |  |  | 281.4h | 156,780 |
| 81 | 1.4.1.1 | Réliser la base de données |  | 20d | 2018-06-15 | 2018-07-13 | 66 | 293.65d | 0d |  | BALAMANE Asma | 140h | 70,000 |
| 82 | 1.4.1.2 | Vérifier l'accessibilité de données |  | 1w | 2018-07-13 | 2018-07-20 | 81 | 293.65d | 0d |  | TAKLIT Zina [60%] | 21h | 15,000 |
| 83 | 1.4.1.3 | Valider la base de données |  | 1w | 2018-07-20 | 2018-07-27 | 82 | 293.65d | 0d |  | BALAMANE Asma [60%]; TAKLIT Zina [20%] | 28h | 15,500 |
| 84 | 1.4.1.4 | Implémenter les différents modules d'accès aux données |  | 7d | 2018-07-27 | 2018-08-07 | 83 | 293.65d | 0d |  | BALAMANE Asma | 49h | 24,500 |
| 85 | 1.4.1.5 | Teste unitaire et correction |  | 8d | 2018-08-07 | 2018-08-17 | 84 | 293.65d |  |  | Testeur [60%]; BALAMANE Asma [20%] | 43.4h | 31,780 |
| 86 | 1.4.2 | **Réalisation du logiciel** |  | 110.33d | 2018-08-07 | 2019-01-09 | 45 | 37.74d |  |  |  | 2844.1h | 1,677,800 |
| 87 | 1.4.2.1 | **Réalisation du modules** |  | 108.33d | 2018-08-07 | 2019-01-07 |  | 37.74d |  |  |  | 2830.1h | 1,667,800 |
| 88 | 1.4.2.1.1 | Réalisation des interfaces du systèmes |  | 1mo | 2018-08-07 | 2018-09-04 | 75 | 37.74d | 0d |  | CHIKHAISSA Mahfoud; OUKHENNICHE Abdelkrim | 280h | 140,000 |
| 89 | 1.4.2.1.2 | Documentation et formulaires |  | 5d | 2018-09-04 | 2018-09-11 | 88 | 37.74d | 0d |  | IHADADENE Thinhinane [90%] | 31.5h | 18,000 |
| 90 | 1.4.2.1.3 | Implémentation des modules du système |  | 50d | 2018-09-11 | 2018-11-20 | 89 | 37.74d | 0d |  | BALAMANE Asma [60%]; CHIKHAISSA Mahfoud [80%]; IHADADENE Thinhinane [80%]; OUKHENNICHE Abdelkrim [80%]; TAKLIT Zina [60%]; YEBDA Sadia | 1435h | 752,500 |
| 91 | 1.4.2.1.4 | Teste des module de système |  | 50d | 2018-09-04 | 2018-11-13 | 88 | 42.74d | 5d |  | Testeur [10%]; IHADADENE Thinhinane [10%]; BALAMANE Asma [10%]; CHIKHAISSA Mahfoud [10%]; OUKHENNICHE Abdelkrim [10%]; TAKLIT Zina [10%] | 210h | 125,500 |
| 92 | 1.4.2.1.5 | Implémentation des mesures de sécurité du sysème |  | 3d | 2018-11-20 | 2018-11-23 | 91, 90 | 210.79d | 0d |  | Expert sécurité [0.1%] |  | 50,000 |
| 93 | 1.4.2.1.6 | Teste des module et de sécurité |  | 12d | 2018-11-23 | 2018-12-11 | 92 | 210.79d |  |  | Expert sécurité [0.1%]; OUKHENNICHE Abdelkrim [40%] | 33.6h | 121,800 |
| 94 | 1.4.2.1.7 | Intégration des modules de système |  | 33.33d | 2018-11-20 | 2019-01-07 | 91, 90 | 37.74d | 0d |  | BALAMANE Asma; CHIKHAISSA Mahfoud; IHADADENE Thinhinane; OUKHENNICHE Abdelkrim [60%]; TAKLIT Zina [70%]; YEBDA Sadia | 840h | 460,000 |
| 95 | 1.4.2.2 | Livrable version alpha | milestone | 0d | 2019-01-07 | 2019-01-07 | 94 | 190.46d | 0d |  | BALAMANE Asma; CHIKHAISSA Mahfoud; IHADADENE Thinhinane; OUKHENNICHE Abdelkrim; TAKLIT Zina; YEBDA Sadia |  |  |
| 96 | 1.4.2.3 | Réunion de présentaion du vesion alpha |  | 2d | 2019-01-07 | 2019-01-09 | 95 | 190.46d |  |  | TAKLIT Zina | 14h | 10,000 |
| 97 | 1.5 | **Tests** |  | 73.74d | 2019-01-07 | 2019-04-18 | 94 | 0d |  |  |  | 1092h | 609,680 |
| 98 | 1.5.1 | Test fonctionnelle |  | 5d | 2019-01-07 | 2019-01-14 |  | 37.74d | 0d |  | Testeur [20%]; YEBDA Sadia [40%] | 21h | 12,600 |
| 99 | 1.5.2 | **Test système** |  | 12d | 2019-01-14 | 2019-01-30 | 98 | 37.74d |  |  |  | 252h | 148,440 |
| 100 | 1.5.2.1 | Test de stress |  | 12d | 2019-01-14 | 2019-01-30 |  | 37.74d |  |  | OUKHENNICHE Abdelkrim [70%]; Testeur [20%] | 75.6h | 42,840 |
| 101 | 1.5.2.2 | Test de performance |  | 12d | 2019-01-14 | 2019-01-30 |  | 37.74d |  |  | Testeur [20%]; IHADADENE Thinhinane | 100.8h | 61,440 |
| 102 | 1.5.2.3 | Test de chargement |  | 4d | 2019-01-14 | 2019-01-18 |  | 45.74d |  |  | Testeur [20%]; TAKLIT Zina [60%]; YEBDA Sadia [90%] | 44.8h | 27,080 |
| 103 | 1.5.2.4 | Test d'utilisabilité |  | 4d | 2019-01-14 | 2019-01-18 |  | 45.74d |  |  | CHIKHAISSA Mahfoud [90%]; Testeur [20%] | 30.8h | 17,080 |
| 104 | 1.5.3 | Test d'accaptation |  | 6d | 2019-03-15 | 2019-03-22 |  | 0d |  | finish no earlier than 2019-03-22 | BALAMANE Asma [40%]; TAKLIT Zina [5%]; Testeur [20%] | 21h | 11,640 |
| 105 | 1.5.4 | Recensement des anomalies |  | 4d | 2019-03-25 | 2019-03-28 | 98, 99, 104 | 0d |  |  | BALAMANE Asma; CHIKHAISSA Mahfoud; IHADADENE Thinhinane; OUKHENNICHE Abdelkrim; TAKLIT Zina; YEBDA Sadia | 168h | 92,000 |
| 106 | 1.5.5 | Corriger les anomalies |  | 15d | 2019-03-29 | 2019-04-18 | 105 | 0d |  |  | BALAMANE Asma; CHIKHAISSA Mahfoud; IHADADENE Thinhinane; OUKHENNICHE Abdelkrim; TAKLIT Zina; YEBDA Sadia | 630h | 345,000 |

| ID | WBS | Task | Type | Duration | Start | Finish | Predecessors | Total slack | Free slack | Resources | Work | Cost |
| --- | --- | --- | --- | --- | --- | --- | --- | --- | --- | --- | --- | --- |
| 107 | 1.6 | **Déploiement** |  | 101d | 2019-04-19 | 2019-09-06 | 97 | 0d |  |  | 1516.2h | 1,023,400 |
| 108 | 1.6.1 | Réunion client pour lançer le déploiment |  | 1d | 2019-04-19 | 2019-04-19 |  | 3d | 0d | TAKLIT Zina | 7h | 5,000 |
| 109 | 1.6.2 | **Déploiement dans une zône bêta** |  | 83d | 2019-04-19 | 2019-08-13 |  | 0d |  |  | 1204h | 848,000 |
| 110 | 1.6.2.1 | **Instalastion du système** |  | 6d | 2019-04-19 | 2019-04-26 |  | 0d |  |  | 119h | 59,500 |
| 111 | 1.6.2.1.1 | Ajouter des configuration au réseau et au serveurs |  | 1w | 2019-04-19 | 2019-04-25 |  | 78d |  | OUKHENNICHE Abdelkrim | 35h | 17,500 |
| 112 | 1.6.2.1.2 | Instalation et configuration système |  | 6d | 2019-04-19 | 2019-04-26 |  | 0d |  | CHIKHAISSA Mahfoud; YEBDA Sadia | 84h | 42,000 |
| 113 | 1.6.2.2 | **Formation** |  | 16d | 2019-04-22 | 2019-05-13 |  | 0d |  |  | 91h | 249,500 |
| 114 | 1.6.2.2.1 | Planning de formation |  | 2d | 2019-04-22 | 2019-04-23 | 108 | 3d |  | IHADADENE Thinhinane; TAKLIT Zina | 28h | 18,000 |
| 115 | 1.6.2.2.2 | Rélisation des support de formation pour les utilisateurs |  | 3d | 2019-04-29 | 2019-05-01 | 114, 112 | 0d |  | CHIKHAISSA Mahfoud; OUKHENNICHE Abdelkrim; YEBDA Sadia | 63h | 31,500 |
| 116 | 1.6.2.2.3 | Former les administrateurs , pratéciens |  | 8d | 2019-05-02 | 2019-05-13 | 115 | 0d |  | Equipe formateurs [0.1%] |  | 200,000 |
| 117 | 1.6.2.3 | Remplir la base de données |  | 16d | 2019-04-19 | 2019-05-10 |  | 1d |  | BALAMANE Asma | 112h | 56,000 |
| 118 | 1.6.2.4 | Essai du système |  | 9w | 2019-05-14 | 2019-07-15 | 113, 117 | 0d |  |  |  |  |
| 119 | 1.6.2.5 | Réunion client après la période d'essai |  | 1d | 2019-07-16 | 2019-07-16 | 118 | 0d |  | BALAMANE Asma; CHIKHAISSA Mahfoud; IHADADENE Thinhinane; OUKHENNICHE Abdelkrim; TAKLIT Zina; YEBDA Sadia | 42h | 23,000 |
| 120 | 1.6.2.6 | Corriger les anomalies |  | 20d | 2019-07-17 | 2019-08-13 | 119 | 0d |  | BALAMANE Asma; CHIKHAISSA Mahfoud; IHADADENE Thinhinane; OUKHENNICHE Abdelkrim; TAKLIT Zina; YEBDA Sadia | 840h | 460,000 |
| 121 | 1.6.3 | **Déploiement sur le territoir national** |  | 18d | 2019-08-13 | 2019-09-06 | 109 | 0d |  |  | 305.2h | 170,400 |
| 122 | 1.6.3.1 | Mettre un plan de déploiment |  | 1w | 2019-08-14 | 2019-08-20 |  | 13d |  | IHADADENE Thinhinane; TAKLIT Zina [60%]; YEBDA Sadia | 91h | 52,500 |
| 123 | 1.6.3.2 | Remplir la BDD |  | 18d | 2019-08-14 | 2019-09-06 |  | 0d |  | BALAMANE Asma; TAKLIT Zina [40%]; OUKHENNICHE Abdelkrim [30%] | 214.2h | 117,900 |
| 124 | 1.6.3.3 | Mise en œuvre de la solution | milestone | 0d | 2019-08-13 | 2019-08-13 |  | 18d |  |  |  |  |
| 125 | 1.7 | **Clôture du projet** |  | 17.71d | 2019-09-09 | 2019-10-02 | 107 | 0d |  |  | 303h | 166,928.57 |
| 126 | 1.7.1 | Bilan technique du projet |  | 2d | 2019-09-09 | 2019-09-10 |  | 13d |  | OUKHENNICHE Abdelkrim | 14h | 7,000 |
| 127 | 1.7.2 | Bilan finiancier du projet |  | 2d | 2019-09-09 | 2019-09-10 |  | 13d |  | BALAMANE Asma; TAKLIT Zina | 28h | 17,000 |
| 128 | 1.7.3 | Mise en place de maintenace |  | 15d | 2019-09-09 | 2019-09-27 |  | 0d |  | CHIKHAISSA Mahfoud; IHADADENE Thinhinane | 210h | 112,500 |
| 129 | 1.7.4 | Réunion de validation du projet de la part du client |  | 1d | 2019-09-30 | 2019-09-30 | 128, 127, 126 | 0d |  | IHADADENE Thinhinane; TAKLIT Zina | 14h | 9,000 |
| 130 | 1.7.5 | Réunion de clôture en présence du MOA |  | 1d | 2019-10-01 | 2019-10-01 | 129 | 0d |  | TAKLIT Zina | 7h | 5,000 |
| 131 | 1.7.6 | Debrifing |  | 5h | 2019-10-02 | 2019-10-02 | 130 | 0d |  | BALAMANE Asma; CHIKHAISSA Mahfoud; IHADADENE Thinhinane; OUKHENNICHE Abdelkrim; TAKLIT Zina; YEBDA Sadia | 30h | 16,428.57 |
| 132 | 1.7.7 | Archiver l'expérience métier | milestone | 0d | 2019-10-02 | 2019-10-02 | 131 | 0d |  |  |  |  |

| ID | WBS | Task | Duration | Start | Finish | Total slack | Constraint |
| --- | --- | --- | --- | --- | --- | --- | --- |
| 133 | 1.8 | **Réunion de l'équipe de projet** | 521d | 2017-10-02 | 2019-09-30 | 1.71d |  |
| 134 | 1.8.1 | Réunion de l'équipe de projet 1 | 1d | 2017-10-02 | 2017-10-02 | 521.71d | start no earlier than 2017-10-01 |
| 135 | 1.8.2 | Réunion de l'équipe de projet 2 | 1d | 2017-10-09 | 2017-10-09 | 516.71d | start no earlier than 2017-10-08 |
| 136 | 1.8.3 | Réunion de l'équipe de projet 3 | 1d | 2017-10-16 | 2017-10-16 | 511.71d | start no earlier than 2017-10-15 |
| 137 | 1.8.4 | Réunion de l'équipe de projet 4 | 1d | 2017-10-23 | 2017-10-23 | 506.71d | start no earlier than 2017-10-22 |
| 138 | 1.8.5 | Réunion de l'équipe de projet 5 | 1d | 2017-10-30 | 2017-10-30 | 501.71d | start no earlier than 2017-10-29 |
| 139 | 1.8.6 | Réunion de l'équipe de projet 6 | 1d | 2017-11-06 | 2017-11-06 | 496.71d | start no earlier than 2017-11-05 |
| 140 | 1.8.7 | Réunion de l'équipe de projet 7 | 1d | 2017-11-13 | 2017-11-13 | 491.71d | start no earlier than 2017-11-12 |
| 141 | 1.8.8 | Réunion de l'équipe de projet 8 | 1d | 2017-11-20 | 2017-11-20 | 486.71d | start no earlier than 2017-11-19 |
| 142 | 1.8.9 | Réunion de l'équipe de projet 9 | 1d | 2017-11-27 | 2017-11-27 | 481.71d | start no earlier than 2017-11-26 |
| 143 | 1.8.10 | Réunion de l'équipe de projet 10 | 1d | 2017-12-04 | 2017-12-04 | 476.71d | start no earlier than 2017-12-03 |
| 144 | 1.8.11 | Réunion de l'équipe de projet 11 | 1d | 2017-12-11 | 2017-12-11 | 471.71d | start no earlier than 2017-12-10 |
| 145 | 1.8.12 | Réunion de l'équipe de projet 12 | 1d | 2017-12-18 | 2017-12-18 | 466.71d | start no earlier than 2017-12-17 |
| 146 | 1.8.13 | Réunion de l'équipe de projet 13 | 1d | 2017-12-25 | 2017-12-25 | 461.71d | start no earlier than 2017-12-24 |
| 147 | 1.8.14 | Réunion de l'équipe de projet 14 | 1d | 2018-01-01 | 2018-01-01 | 456.71d | start no earlier than 2017-12-31 |
| 148 | 1.8.15 | Réunion de l'équipe de projet 15 | 1d | 2018-01-08 | 2018-01-08 | 451.71d | start no earlier than 2018-01-07 |
| 149 | 1.8.16 | Réunion de l'équipe de projet 16 | 1d | 2018-01-15 | 2018-01-15 | 446.71d | start no earlier than 2018-01-14 |
| 150 | 1.8.17 | Réunion de l'équipe de projet 17 | 1d | 2018-01-22 | 2018-01-22 | 441.71d | start no earlier than 2018-01-21 |
| 151 | 1.8.18 | Réunion de l'équipe de projet 18 | 1d | 2018-01-29 | 2018-01-29 | 436.71d | start no earlier than 2018-01-28 |
| 152 | 1.8.19 | Réunion de l'équipe de projet 19 | 1d | 2018-02-05 | 2018-02-05 | 431.71d | start no earlier than 2018-02-04 |
| 153 | 1.8.20 | Réunion de l'équipe de projet 20 | 1d | 2018-02-12 | 2018-02-12 | 426.71d | start no earlier than 2018-02-11 |
| 154 | 1.8.21 | Réunion de l'équipe de projet 21 | 1d | 2018-02-19 | 2018-02-19 | 421.71d | start no earlier than 2018-02-18 |
| 155 | 1.8.22 | Réunion de l'équipe de projet 22 | 1d | 2018-02-26 | 2018-02-26 | 416.71d | start no earlier than 2018-02-25 |
| 156 | 1.8.23 | Réunion de l'équipe de projet 23 | 1d | 2018-03-05 | 2018-03-05 | 411.71d | start no earlier than 2018-03-04 |
| 157 | 1.8.24 | Réunion de l'équipe de projet 24 | 1d | 2018-03-12 | 2018-03-12 | 406.71d | start no earlier than 2018-03-11 |
| 158 | 1.8.25 | Réunion de l'équipe de projet 25 | 1d | 2018-03-19 | 2018-03-19 | 401.71d | start no earlier than 2018-03-18 |
| 159 | 1.8.26 | Réunion de l'équipe de projet 26 | 1d | 2018-03-26 | 2018-03-26 | 396.71d | start no earlier than 2018-03-25 |
| 160 | 1.8.27 | Réunion de l'équipe de projet 27 | 1d | 2018-04-02 | 2018-04-02 | 391.71d | start no earlier than 2018-04-01 |
| 161 | 1.8.28 | Réunion de l'équipe de projet 28 | 1d | 2018-04-09 | 2018-04-09 | 386.71d | start no earlier than 2018-04-08 |
| 162 | 1.8.29 | Réunion de l'équipe de projet 29 | 1d | 2018-04-16 | 2018-04-16 | 381.71d | start no earlier than 2018-04-15 |
| 163 | 1.8.30 | Réunion de l'équipe de projet 30 | 1d | 2018-04-23 | 2018-04-23 | 376.71d | start no earlier than 2018-04-22 |
| 164 | 1.8.31 | Réunion de l'équipe de projet 31 | 1d | 2018-04-30 | 2018-04-30 | 371.71d | start no earlier than 2018-04-29 |
| 165 | 1.8.32 | Réunion de l'équipe de projet 32 | 1d | 2018-05-07 | 2018-05-07 | 366.71d | start no earlier than 2018-05-06 |
| 166 | 1.8.33 | Réunion de l'équipe de projet 33 | 1d | 2018-05-14 | 2018-05-14 | 361.71d | start no earlier than 2018-05-13 |
| 167 | 1.8.34 | Réunion de l'équipe de projet 34 | 1d | 2018-05-21 | 2018-05-21 | 356.71d | start no earlier than 2018-05-20 |
| 168 | 1.8.35 | Réunion de l'équipe de projet 35 | 1d | 2018-05-28 | 2018-05-28 | 351.71d | start no earlier than 2018-05-27 |
| 169 | 1.8.36 | Réunion de l'équipe de projet 36 | 1d | 2018-06-04 | 2018-06-04 | 346.71d | start no earlier than 2018-06-03 |
| 170 | 1.8.37 | Réunion de l'équipe de projet 37 | 1d | 2018-06-11 | 2018-06-11 | 341.71d | start no earlier than 2018-06-10 |
| 171 | 1.8.38 | Réunion de l'équipe de projet 38 | 1d | 2018-06-18 | 2018-06-18 | 336.71d | start no earlier than 2018-06-17 |
| 172 | 1.8.39 | Réunion de l'équipe de projet 39 | 1d | 2018-06-25 | 2018-06-25 | 331.71d | start no earlier than 2018-06-24 |
| 173 | 1.8.40 | Réunion de l'équipe de projet 40 | 1d | 2018-07-02 | 2018-07-02 | 326.71d | start no earlier than 2018-07-01 |
| 174 | 1.8.41 | Réunion de l'équipe de projet 41 | 1d | 2018-07-09 | 2018-07-09 | 321.71d | start no earlier than 2018-07-08 |
| 175 | 1.8.42 | Réunion de l'équipe de projet 42 | 1d | 2018-07-16 | 2018-07-16 | 316.71d | start no earlier than 2018-07-15 |
| 176 | 1.8.43 | Réunion de l'équipe de projet 43 | 1d | 2018-07-23 | 2018-07-23 | 311.71d | start no earlier than 2018-07-22 |
| 177 | 1.8.44 | Réunion de l'équipe de projet 44 | 1d | 2018-07-30 | 2018-07-30 | 306.71d | start no earlier than 2018-07-29 |
| 178 | 1.8.45 | Réunion de l'équipe de projet 45 | 1d | 2018-08-06 | 2018-08-06 | 301.71d | start no earlier than 2018-08-05 |
| 179 | 1.8.46 | Réunion de l'équipe de projet 46 | 1d | 2018-08-13 | 2018-08-13 | 296.71d | start no earlier than 2018-08-12 |
| 180 | 1.8.47 | Réunion de l'équipe de projet 47 | 1d | 2018-08-20 | 2018-08-20 | 291.71d | start no earlier than 2018-08-19 |
| 181 | 1.8.48 | Réunion de l'équipe de projet 48 | 1d | 2018-08-27 | 2018-08-27 | 286.71d | start no earlier than 2018-08-26 |
| 182 | 1.8.49 | Réunion de l'équipe de projet 49 | 1d | 2018-09-03 | 2018-09-03 | 281.71d | start no earlier than 2018-09-02 |
| 183 | 1.8.50 | Réunion de l'équipe de projet 50 | 1d | 2018-09-10 | 2018-09-10 | 276.71d | start no earlier than 2018-09-09 |
| 184 | 1.8.51 | Réunion de l'équipe de projet 51 | 1d | 2018-09-17 | 2018-09-17 | 271.71d | start no earlier than 2018-09-16 |
| 185 | 1.8.52 | Réunion de l'équipe de projet 52 | 1d | 2018-09-24 | 2018-09-24 | 266.71d | start no earlier than 2018-09-23 |
| 186 | 1.8.53 | Réunion de l'équipe de projet 53 | 1d | 2018-10-01 | 2018-10-01 | 261.71d | start no earlier than 2018-09-30 |
| 187 | 1.8.54 | Réunion de l'équipe de projet 54 | 1d | 2018-10-08 | 2018-10-08 | 256.71d | start no earlier than 2018-10-07 |
| 188 | 1.8.55 | Réunion de l'équipe de projet 55 | 1d | 2018-10-15 | 2018-10-15 | 251.71d | start no earlier than 2018-10-14 |
| 189 | 1.8.56 | Réunion de l'équipe de projet 56 | 1d | 2018-10-22 | 2018-10-22 | 246.71d | start no earlier than 2018-10-21 |
| 190 | 1.8.57 | Réunion de l'équipe de projet 57 | 1d | 2018-10-29 | 2018-10-29 | 241.71d | start no earlier than 2018-10-28 |
| 191 | 1.8.58 | Réunion de l'équipe de projet 58 | 1d | 2018-11-05 | 2018-11-05 | 236.71d | start no earlier than 2018-11-04 |
| 192 | 1.8.59 | Réunion de l'équipe de projet 59 | 1d | 2018-11-12 | 2018-11-12 | 231.71d | start no earlier than 2018-11-11 |
| 193 | 1.8.60 | Réunion de l'équipe de projet 60 | 1d | 2018-11-19 | 2018-11-19 | 226.71d | start no earlier than 2018-11-18 |
| 194 | 1.8.61 | Réunion de l'équipe de projet 61 | 1d | 2018-11-26 | 2018-11-26 | 221.71d | start no earlier than 2018-11-25 |
| 195 | 1.8.62 | Réunion de l'équipe de projet 62 | 1d | 2018-12-03 | 2018-12-03 | 216.71d | start no earlier than 2018-12-02 |
| 196 | 1.8.63 | Réunion de l'équipe de projet 63 | 1d | 2018-12-10 | 2018-12-10 | 211.71d | start no earlier than 2018-12-09 |
| 197 | 1.8.64 | Réunion de l'équipe de projet 64 | 1d | 2018-12-17 | 2018-12-17 | 206.71d | start no earlier than 2018-12-16 |
| 198 | 1.8.65 | Réunion de l'équipe de projet 65 | 1d | 2018-12-24 | 2018-12-24 | 201.71d | start no earlier than 2018-12-23 |
| 199 | 1.8.66 | Réunion de l'équipe de projet 66 | 1d | 2018-12-31 | 2018-12-31 | 196.71d | start no earlier than 2018-12-30 |
| 200 | 1.8.67 | Réunion de l'équipe de projet 67 | 1d | 2019-01-07 | 2019-01-07 | 191.71d | start no earlier than 2019-01-06 |
| 201 | 1.8.68 | Réunion de l'équipe de projet 68 | 1d | 2019-01-14 | 2019-01-14 | 186.71d | start no earlier than 2019-01-13 |
| 202 | 1.8.69 | Réunion de l'équipe de projet 69 | 1d | 2019-01-21 | 2019-01-21 | 181.71d | start no earlier than 2019-01-20 |

| ID | WBS | Task | Duration | Start | Finish | Total slack | Constraint |
| --- | --- | --- | --- | --- | --- | --- | --- |
| 203 | 1.8.70 | Réunion de l'équipe de projet 70 | 1d | 2019-01-28 | 2019-01-28 | 176.71d | start no earlier than 2019-01-27 |
| 204 | 1.8.71 | Réunion de l'équipe de projet 71 | 1d | 2019-02-04 | 2019-02-04 | 171.71d | start no earlier than 2019-02-03 |
| 205 | 1.8.72 | Réunion de l'équipe de projet 72 | 1d | 2019-02-11 | 2019-02-11 | 166.71d | start no earlier than 2019-02-10 |
| 206 | 1.8.73 | Réunion de l'équipe de projet 73 | 1d | 2019-02-18 | 2019-02-18 | 161.71d | start no earlier than 2019-02-17 |
| 207 | 1.8.74 | Réunion de l'équipe de projet 74 | 1d | 2019-02-25 | 2019-02-25 | 156.71d | start no earlier than 2019-02-24 |
| 208 | 1.8.75 | Réunion de l'équipe de projet 75 | 1d | 2019-03-04 | 2019-03-04 | 151.71d | start no earlier than 2019-03-03 |
| 209 | 1.8.76 | Réunion de l'équipe de projet 76 | 1d | 2019-03-11 | 2019-03-11 | 146.71d | start no earlier than 2019-03-10 |
| 210 | 1.8.77 | Réunion de l'équipe de projet 77 | 1d | 2019-03-18 | 2019-03-18 | 141.71d | start no earlier than 2019-03-17 |
| 211 | 1.8.78 | Réunion de l'équipe de projet 78 | 1d | 2019-03-25 | 2019-03-25 | 136.71d | start no earlier than 2019-03-24 |
| 212 | 1.8.79 | Réunion de l'équipe de projet 79 | 1d | 2019-04-01 | 2019-04-01 | 131.71d | start no earlier than 2019-03-31 |
| 213 | 1.8.80 | Réunion de l'équipe de projet 80 | 1d | 2019-04-08 | 2019-04-08 | 126.71d | start no earlier than 2019-04-07 |
| 214 | 1.8.81 | Réunion de l'équipe de projet 81 | 1d | 2019-04-15 | 2019-04-15 | 121.71d | start no earlier than 2019-04-14 |
| 215 | 1.8.82 | Réunion de l'équipe de projet 82 | 1d | 2019-04-22 | 2019-04-22 | 116.71d | start no earlier than 2019-04-21 |
| 216 | 1.8.83 | Réunion de l'équipe de projet 83 | 1d | 2019-04-29 | 2019-04-29 | 111.71d | start no earlier than 2019-04-28 |
| 217 | 1.8.84 | Réunion de l'équipe de projet 84 | 1d | 2019-05-06 | 2019-05-06 | 106.71d | start no earlier than 2019-05-05 |
| 218 | 1.8.85 | Réunion de l'équipe de projet 85 | 1d | 2019-05-13 | 2019-05-13 | 101.71d | start no earlier than 2019-05-12 |
| 219 | 1.8.86 | Réunion de l'équipe de projet 86 | 1d | 2019-05-20 | 2019-05-20 | 96.71d | start no earlier than 2019-05-19 |
| 220 | 1.8.87 | Réunion de l'équipe de projet 87 | 1d | 2019-05-27 | 2019-05-27 | 91.71d | start no earlier than 2019-05-26 |
| 221 | 1.8.88 | Réunion de l'équipe de projet 88 | 1d | 2019-06-03 | 2019-06-03 | 86.71d | start no earlier than 2019-06-02 |
| 222 | 1.8.89 | Réunion de l'équipe de projet 89 | 1d | 2019-06-10 | 2019-06-10 | 81.71d | start no earlier than 2019-06-09 |
| 223 | 1.8.90 | Réunion de l'équipe de projet 90 | 1d | 2019-06-17 | 2019-06-17 | 76.71d | start no earlier than 2019-06-16 |
| 224 | 1.8.91 | Réunion de l'équipe de projet 91 | 1d | 2019-06-24 | 2019-06-24 | 71.71d | start no earlier than 2019-06-23 |
| 225 | 1.8.92 | Réunion de l'équipe de projet 92 | 1d | 2019-07-01 | 2019-07-01 | 66.71d | start no earlier than 2019-06-30 |
| 226 | 1.8.93 | Réunion de l'équipe de projet 93 | 1d | 2019-07-08 | 2019-07-08 | 61.71d | start no earlier than 2019-07-07 |
| 227 | 1.8.94 | Réunion de l'équipe de projet 94 | 1d | 2019-07-15 | 2019-07-15 | 56.71d | start no earlier than 2019-07-14 |
| 228 | 1.8.95 | Réunion de l'équipe de projet 95 | 1d | 2019-07-22 | 2019-07-22 | 51.71d | start no earlier than 2019-07-21 |
| 229 | 1.8.96 | Réunion de l'équipe de projet 96 | 1d | 2019-07-29 | 2019-07-29 | 46.71d | start no earlier than 2019-07-28 |
| 230 | 1.8.97 | Réunion de l'équipe de projet 97 | 1d | 2019-08-05 | 2019-08-05 | 41.71d | start no earlier than 2019-08-04 |
| 231 | 1.8.98 | Réunion de l'équipe de projet 98 | 1d | 2019-08-12 | 2019-08-12 | 36.71d | start no earlier than 2019-08-11 |
| 232 | 1.8.99 | Réunion de l'équipe de projet 99 | 1d | 2019-08-19 | 2019-08-19 | 31.71d | start no earlier than 2019-08-18 |
| 233 | 1.8.100 | Réunion de l'équipe de projet 100 | 1d | 2019-08-26 | 2019-08-26 | 26.71d | start no earlier than 2019-08-25 |
| 234 | 1.8.101 | Réunion de l'équipe de projet 101 | 1d | 2019-09-02 | 2019-09-02 | 21.71d | start no earlier than 2019-09-01 |
| 235 | 1.8.102 | Réunion de l'équipe de projet 102 | 1d | 2019-09-09 | 2019-09-09 | 16.71d | start no earlier than 2019-09-08 |
| 236 | 1.8.103 | Réunion de l'équipe de projet 103 | 1d | 2019-09-16 | 2019-09-16 | 11.71d | start no earlier than 2019-09-15 |
| 237 | 1.8.104 | Réunion de l'équipe de projet 104 | 1d | 2019-09-23 | 2019-09-23 | 6.71d | start no earlier than 2019-09-22 |
| 238 | 1.8.105 | Réunion de l'équipe de projet 105 | 1d | 2019-09-30 | 2019-09-30 | 1.71d | start no earlier than 2019-09-29 |
